Schedule from MS Project, 2009-11-16 to 2010-04-05.
Microsoft

## Calendars

- Стандартный: Mon-Fri 09:00-13:00, 14:00-18:00; Sat-Sun off.

## Resources

| Resource | Group | Unit |
| --- | --- | --- |
| Затраты труда рабочих-строителей Разряд 4,2 | Рабочие |  |
| Доски обрезные хвойных пород длиной 4-6,5 м, шириной 75-150 мм, толщиной 44 мм и более, III сорта |  | м3 |
| Вибратор глубинный | Машины |  |
| Раствор готовый кладочный тяжелый цементный |  | м3 |
| Материалы рулонные кровельные |  | м2 |
| Автогрейдеры среднего типа 99 кВт(135 л.с.) | Машины |  |
| Болты с гайками и шайбами строительные |  | т |
| Установки для сварки ручной дуговой(постоянного тока) | Машины |  |
| Краны на гусеничном ходу при работе на других видах строительства 25 т | Машины |  |
| Доски обрезные хвойных пород длиной 4-6,5 м, шириной 75-150 мм, толщиной 44 мм и более, II сорта |  | м3 |
| Масла антраценовые |  | т |
| Смола каменноугольная для дорожного строительства |  | т |
| Симазин 50%-ный порошок смачивающийся |  | т |
| Гипсовые вяжущие, марка Г3 |  | т |
| Доски обрезные хвойных пород длиной 4-6,5 м, шириной 75-150 мм, толщиной 32-40 мм, IV сорта |  | м3 |
| Смазка солидол жировой марки <Ж> |  | т |
| Проволока светлая диаметром 1,1 мм |  | т |
| Затраты труда рабочих-строителей Разряд 3,4 | Рабочие |  |
| Рогожа |  | м2 |
| Краны башенные при работе на других видах строительства 8 т | Машины |  |
| Бруски обрезные хвойных пород длиной 4-6,5 м, шириной 75-150 мм, толщиной 40-75 мм, III сорта |  | м3 |
| Плитки керамические для полов гладкие неглазурованные многоцветные квадратные и прямоугольные |  | м2 |
| Краны на автомобильном ходу при работе на других видах строительства 10 т | Машины |  |
| Опалубка переставная(амортизация) |  | компл. |
| Котлы битумные передвижные 400 л | Машины |  |
| Автомобили бортовые, грузоподъемность до 8 т | Машины |  |
| Конструктивные элементы вспомогательного назначения с преобладанием профильного проката собираемые из двух и более деталей, с отверстиями и без отверстий, соединяемые на сварке |  | т |
| Доски обрезные хвойных пород длиной 4-6,5 м, шириной 75-150 мм, толщиной 25 мм, III сорта |  | м3 |
| Затраты труда рабочих-строителей Разряд 2,7 | Рабочие |  |
| Доски подоконные деревянные |  | метры |
| Проволока горячекатаная в мотках, диаметром 6,3-6,5 мм |  | т |
| Блоки оконные |  | м2 |
| Конструкции сборные железобетонные |  | шт. |
| Толь с крупнозернистой посыпкой марки ТВК-350 |  | м2 |
| Электроды диаметром 4 мм Э42 |  | т |
| Подъемники грузоподъемностью до 500 кг одномачтовые, высота подъема 45 м | Машины |  |
| Затраты труда рабочих-строителей Разряд 3,8 | Рабочие |  |
| Линолеум на теплозвукоизолирующей подоснове |  | м2 |
| Раствор готовый отделочный тяжелый, известковый 1:3 |  | м3 |
| Палуба опалубки типа<Дока> из бакелизированной фанеры |  | м2 |
| Гвозди проволочные круглые формовочные 1,6х100 мм |  | т |
| Горячекатаная арматурная сталь класс а А-I |  | т |
| Лесоматериалы круглые хвойных пород для выработки пиломатериалов и заготовок (пластины) толщиной 20-24 см, III сорта |  | м3 |
| Экскаваторы одноковшовые дизельные на гусеничном ходу при работе на других видах строительства 0,5 м3 | Машины |  |
| Ветошь |  | кг |
| Опилки древесные |  | м3 |
| Проволока наплавочная диаметром 3 мм ПП-Нп-19СТ |  | т |
| Плиты гипсовые толщиной до 100 мм |  | м2 |
| Бетон |  | м3 |
| Поковки из квадратных заготовок, масса 1,8 кг |  | т |
| Затраты труда рабочих-строителей Разряд 4 | Рабочие |  |
| Поковки из квадратных заготовок, масса 2,825 кг |  | т |
| Полуприцепы-тяжеловозы, грузоподъемность 40 т | Машины |  |
| Вода |  | м3 |
| Рубероид подкладочный с пылевидной посыпкой РПП-300б |  | м2 |
| Раствор готовый кладочный цементный марки 50 |  | м3 |
| Раствор готовый кладочный цементный марки 200 |  | м3 |
| Клей <Бустилат> |  | т |
| Натрий фтористый технический, марка А, сорт I |  | т |
| Затраты труда рабочих-строителей Разряд 3,7 | Рабочие |  |
| Бетон тяжелый |  | м3 |
| Блоки дверные |  | м2 |
| Ацетилен растворенный технический марки А |  | т |
| Опалубка типа<Дока> (конструкции металлические) |  | компл. |
| Автопогрузчики 5 т | Машины |  |
| Трамбовки пневматические при работе от передвижных компрессорных станций | Машины |  |
| Шуруповерт | Машины |  |
| Кислород технический газообразный |  | м3 |
| Арматура |  | т |
| Тягачи седельные, грузоподъемность 15 т | Машины |  |
| Автомобили бортовые, грузоподъемность до 5 т | Машины |  |
| Краны башенные при работе на других видах строительства 10 т | Машины |  |
| Пила цепная электрическая | Машины |  |
| Гвозди строительные |  | т |
| Комплексы вакуумные типа СО-177 | Машины |  |
| Шурупы строительные |  | т |
| Компрессоры передвижные с двигателем внутреннего сгорания давлением до 686 кПа(7 ат), производительность 5 м3/мин | Машины |  |
| Скобяные изделия |  | компл. |
| Горячекатаная арматурная сталь гладкая класса А-I, диаметром 14 мм |  | т |
| Гвозди толевые круглые 3,0х40 мм |  | т |
| Краны на гусеничном ходу при работе на других видах строительства 40 т | Машины |  |
| Электроды диаметром 6 мм Э42 |  | т |
| Доски обрезные хвойных пород длиной 2-3,75 м, шириной 75-150 мм, толщиной 44 мм и более, II сорта |  | м3 |
| Войлок строительный |  | т |
| Затраты труда рабочих-строителей Разряд 3,1 | Рабочие |  |
| Затраты труда рабочих-строителей Разряд 3,6 | Рабочие |  |
| Песок для строительных работ природный |  | м3 |
| Затраты труда рабочих-строителей Разряд 3,2 | Рабочие |  |
| Пена монтажная |  | л |
| Доски обрезные хвойных пород длиной 2-3,75 м, шириной 75-150 мм, толщиной 25 мм, IV сорта |  | м3 |
| Трамбовки пневматические при работе от стационарного компрессора | Машины |  |
| Затраты труда машинистов (справочно, входит в стоимость ЭМ) | Рабочие |  |
| Толь с крупнозернистой посыпкой гидроизоляционный марки ТГ-350 |  | м2 |
| Мастика битумная кровельная горячая |  | т |
| Вибратор поверхностный | Машины |  |
| Бульдозеры при работе на других видах строительства 79 кВт (108 л.с.) | Машины |  |
| Раствор готовый отделочный тяжелый, известковый 1:2,0 |  | м3 |
| Аппарат для газовой сварки и резки | Машины |  |
| Гравий для строительных работ, фракция 5 -10 мм |  | м3 |

## Schedule

| ID | Task | Duration | Start | Finish | Predecessors | Total slack | Free slack | Resources | Work |
| --- | --- | --- | --- | --- | --- | --- | --- | --- | --- |
| 1 | Подготовительные работы | 10d | 2009-11-16 | 2009-11-27 |  | 0d |  |  |  |
| 2 | Планировка площадей | 1d | 2009-11-30 | 2009-11-30 | 1 | 0d |  | Бульдозеры при работе на других видах строительства 79 кВт (108 л.с.) [67.9%]; Автогрейдеры среднего типа 99 кВт(135 л.с.) [35.3%]; Затраты труда машинистов (справочно, входит в стоимость ЭМ) [103.3%] | 16.52h |
| 3 | Прочие и неучтенные общестроительные работы | 5d | 2009-11-30 | 2009-12-04 | 1 | 69d | 0d |  |  |
| 4 | Разработка грунта в отвал в котлованах | 1d | 2009-12-01 | 2009-12-01 | 2 | 0d |  | Экскаваторы одноковшовые дизельные на гусеничном ходу при работе на других видах строительства 0,5 м3 [56.4%]; Затраты труда машинистов (справочно, входит в стоимость ЭМ) [56.4%] | 9.03h |
| 5 | Укладка фундаментов под колонны | 7d | 2009-12-02 | 2009-12-10 | 4 | 0d |  | Конструкции сборные железобетонные [17.32 шт.]; Песок для строительных работ природный [6.84 м3]; Краны на гусеничном ходу при работе на других видах строительства 25 т [1482.3%]; Автопогрузчики 5 т [75.4%]; Компрессоры передвижные с двигателем внутреннего сгорания давлением до 686 кПа(7 ат), производительность 5 м3/мин [21%]; Трамбовки пневматические при работе от передвижных компрессорных станций [83.3%]; Тягачи седельные, грузоподъемность 15 т [294.5%]; Полуприцепы-тяжеловозы, грузоподъемность 40 т [294.5%]; Затраты труда рабочих-строителей Разряд 3,4 [5346.1%]; Затраты труда машинистов (справочно, входит в стоимость ЭМ) [1578.7%] | 5138.47h |
| 6 | Укладка ригелей | 1d | 2009-12-10 | 2009-12-11 | 5 | 0d |  | Проволока горячекатаная в мотках, диаметром 6,3-6,5 мм; Смазка солидол жировой марки <Ж>; Электроды диаметром 6 мм Э42; Доски обрезные хвойных пород длиной 4-6,5 м, шириной 75-150 мм, толщиной 32-40 мм, IV сорта; Бетон [0.02 м3]; Конструкции сборные железобетонные [1.39 шт.]; Краны на гусеничном ходу при работе на других видах строительства 40 т [105.7%]; Установки для сварки ручной дуговой(постоянного тока) [31.3%]; Вибратор глубинный [2%]; Автомобили бортовые, грузоподъемность до 5 т [0.3%]; Тягачи седельные, грузоподъемность 15 т [27.5%]; Полуприцепы-тяжеловозы, грузоподъемность 40 т [27.5%]; Затраты труда рабочих-строителей Разряд 3,8 [560%]; Затраты труда машинистов (справочно, входит в стоимость ЭМ) [105.7%] | 68.81h |
| 7 | Сантехнические работы 1-я стадия | 5d | 2009-12-11 | 2009-12-17 | 5 | 77d |  |  |  |
| 8 | Электромонтажные работы 1 стадия | 5d | 2009-12-11 | 2009-12-17 | 5 | 77d |  |  |  |
| 9 | Установка диафрагм жесткости | 8d | 2009-12-11 | 2009-12-23 | 6 | 0d |  | Ацетилен растворенный технический марки А; Кислород технический газообразный [1.22 м3]; Поковки из квадратных заготовок, масса 2,825 кг; Проволока наплавочная диаметром 3 мм ПП-Нп-19СТ; Электроды диаметром 6 мм Э42 [0.05 т]; Болты с гайками и шайбами строительные [0.02 т]; Гвозди строительные; Лесоматериалы круглые хвойных пород для выработки пиломатериалов и заготовок (пластины) толщиной 20-24 см, III сорта [0.07 м3]; Доски обрезные хвойных пород длиной 4-6,5 м, шириной 75-150 мм, толщиной 44 мм и более, II сорта [0.28 м3]; Конструктивные элементы вспомогательного назначения с преобладанием профильного проката собираемые из двух и более деталей, с отверстиями и без отверстий, соединяемые на сварке [0.81 т]; Бетон [4.97 м3]; Раствор готовый кладочный цементный марки 200 [0.44 м3]; Конструкции сборные железобетонные [23.54 шт.]; Краны башенные при работе на других видах строительства 8 т [3940.3%]; Установки для сварки ручной дуговой(постоянного тока) [3176.6%]; Аппарат для газовой сварки и резки [120.5%]; Вибратор глубинный [443.6%]; Автомобили бортовые, грузоподъемность до 5 т [196.6%]; Затраты труда рабочих-строителей Разряд 4,2 [29532.2%]; Затраты труда машинистов (справочно, входит в стоимость ЭМ) [3940.3%] | 26464.1h |
| 10 | Укладка ригелей | 3d | 2009-12-11 | 2009-12-16 | 6 | 8d | 5d | Проволока горячекатаная в мотках, диаметром 6,3-6,5 мм; Смазка солидол жировой марки <Ж>; Электроды диаметром 6 мм Э42 [0.02 т]; Доски обрезные хвойных пород длиной 4-6,5 м, шириной 75-150 мм, толщиной 32-40 мм, IV сорта [0.04 м3]; Бетон [0.42 м3]; Конструкции сборные железобетонные [24.27 шт.]; Краны на гусеничном ходу при работе на других видах строительства 40 т [1851.6%]; Установки для сварки ручной дуговой(постоянного тока) [548.1%]; Вибратор глубинный [35.4%]; Автомобили бортовые, грузоподъемность до 5 т [4.9%]; Тягачи седельные, грузоподъемность 15 т [482.1%]; Полуприцепы-тяжеловозы, грузоподъемность 40 т [482.1%]; Затраты труда рабочих-строителей Разряд 3,8 [9807.8%]; Затраты труда машинистов (справочно, входит в стоимость ЭМ) [1851.6%] | 3615.28h |
| 11 | Установка колонн прямоугольного сечения в стаканы фундаментов зданий | 7d | 2009-12-24 | 2010-01-01 | 9 | 0d |  | Доски обрезные хвойных пород длиной 2-3,75 м, шириной 75-150 мм, толщиной 44 мм и более, II сорта [0.14 м3]; Бетон [4.64 м3]; Конструкции сборные железобетонные [43 шт.]; Краны на гусеничном ходу при работе на других видах строительства 25 т [7595.9%]; Вибратор глубинный [390%]; Автомобили бортовые, грузоподъемность до 5 т [8.6%]; Тягачи седельные, грузоподъемность 15 т [1609.5%]; Полуприцепы-тяжеловозы, грузоподъемность 40 т [1609.5%]; Затраты труда рабочих-строителей Разряд 3,7 [53934.9%]; Затраты труда машинистов (справочно, входит в стоимость ЭМ) [7595.9%] | 40736.9h |
| 12 | Укладка плит перекрытий | 7d | 2010-01-04 | 2010-01-12 | 11 | 1d | 0d | Проволока горячекатаная в мотках, диаметром 6,3-6,5 мм [0.06 т]; Рубероид подкладочный с пылевидной посыпкой РПП-300б [148.33 м2]; Смазка солидол жировой марки <Ж> [0.01 т]; Электроды диаметром 6 мм Э42 [0.05 т]; Доски обрезные хвойных пород длиной 4-6,5 м, шириной 75-150 мм, толщиной 32-40 мм, IV сорта [1.28 м3]; Конструктивные элементы вспомогательного назначения с преобладанием профильного проката собираемые из двух и более деталей, с отверстиями и без отверстий, соединяемые на сварке [0.39 т]; Горячекатаная арматурная сталь гладкая класса А-I, диаметром 14 мм [0.03 т]; Бетон [31.78 м3]; Конструкции сборные железобетонные [151.35 шт.]; Краны на гусеничном ходу при работе на других видах строительства 40 т [4840.3%]; Установки для сварки ручной дуговой(постоянного тока) [1434.8%]; Автомобили бортовые, грузоподъемность до 5 т [1872.3%]; Затраты труда рабочих-строителей Разряд 3,6 [33768.7%]; Затраты труда машинистов (справочно, входит в стоимость ЭМ) [4840.3%] | 26183.6h |
| 13 | Укладка блоков и плит ленточных фундаментов | 3d | 2010-01-13 | 2010-01-15 | 12 | 4d | 0d | Конструкции сборные железобетонные [43 шт.]; Песок для строительных работ природный [16.98 м3]; Краны на гусеничном ходу при работе на других видах строительства 25 т [1927.3%]; Автопогрузчики 5 т [187.1%]; Компрессоры передвижные с двигателем внутреннего сгорания давлением до 686 кПа(7 ат), производительность 5 м3/мин [52%]; Трамбовки пневматические при работе от стационарного компрессора [206.8%]; Тягачи седельные, грузоподъемность 15 т [603.3%]; Полуприцепы-тяжеловозы, грузоподъемность 40 т [603.3%]; Затраты труда рабочих-строителей Разряд 3,6 [8018.6%]; Затраты труда машинистов (справочно, входит в стоимость ЭМ) [2166.3%] | 3303.54h |
| 14 | Установка перегородок из гипсовых плит | 2d | 2010-01-15 | 2010-01-19 | 13 | 4d | 0d | Гвозди проволочные круглые формовочные 1,6х100 мм; Поковки из квадратных заготовок, масса 1,8 кг; Толь с крупнозернистой посыпкой марки ТВК-350 [0.97 м2]; Плиты гипсовые толщиной до 100 мм [14.74 м2]; Бруски обрезные хвойных пород длиной 4-6,5 м, шириной 75-150 мм, толщиной 40-75 мм, III сорта [0.02 м3]; Горячекатаная арматурная сталь класс а А-I; Гипсовые вяжущие, марка Г3 [0.09 т]; Песок для строительных работ природный [0.1 м3]; Вода [0.04 м3]; Краны башенные при работе на других видах строительства 8 т [34.7%]; Автомобили бортовые, грузоподъемность до 5 т [17.3%]; Затраты труда рабочих-строителей Разряд 3,6 [1568.6%]; Затраты труда машинистов (справочно, входит в стоимость ЭМ) [34.7%] | 264.85h |
| 15 | Укладка перемычек | 4d | 2010-01-20 | 2010-01-25 | 14 | 4d | 0d | Раствор готовый кладочный цементный марки 50 [0.2 м3]; Конструкции сборные железобетонные [62 шт.]; Краны башенные при работе на других видах строительства 10 т [2676.5%]; Затраты труда рабочих-строителей Разряд 3,2 [6986.8%]; Затраты труда машинистов (справочно, входит в стоимость ЭМ) [2676.5%] | 3948.76h |
| 16 | Устройство кровель | 2d | 2010-01-25 | 2010-01-27 | 15 | 6d | 0d | Мастика битумная кровельная горячая [0.44 т]; Материалы рулонные кровельные [162.45 м2]; Симазин 50%-ный порошок смачивающийся; Гравий для строительных работ, фракция 5 -10 мм [0.37 м3]; Краны башенные при работе на других видах строительства 8 т [15.5%]; Краны на автомобильном ходу при работе на других видах строительства 10 т [8.8%]; Автопогрузчики 5 т [4.6%]; Котлы битумные передвижные 400 л [363.4%]; Автомобили бортовые, грузоподъемность до 5 т [12.7%]; Затраты труда рабочих-строителей Разряд 3,8 [1049.6%]; Затраты труда машинистов (справочно, входит в стоимость ЭМ) [29%] | 237.38h |
| 17 | Устройство лестничных маршей в опалубке | 3d | 2010-01-27 | 2010-02-01 | 16 | 6d |  | Масла антраценовые; Проволока светлая диаметром 1,1 мм; Электроды диаметром 4 мм Э42; Рогожа [0.86 м2]; Гвозди строительные; Опалубка переставная(амортизация); Опалубка типа<Дока> (конструкции металлические); Палуба опалубки типа<Дока> из бакелизированной фанеры [0.58 м2]; Бруски обрезные хвойных пород длиной 4-6,5 м, шириной 75-150 мм, толщиной 40-75 мм, III сорта [0.02 м3]; Доски обрезные хвойных пород длиной 4-6,5 м, шириной 75-150 мм, толщиной 25 мм, III сорта; Доски обрезные хвойных пород длиной 4-6,5 м, шириной 75-150 мм, толщиной 44 мм и более, III сорта [0.02 м3]; Арматура [0.31 т]; Бетон тяжелый [2.03 м3]; Вода; Краны башенные при работе на других видах строительства 8 т [103.4%]; Краны на автомобильном ходу при работе на других видах строительства 10 т [4.7%]; Автопогрузчики 5 т [5.1%]; Установки для сварки ручной дуговой(постоянного тока) [26.4%]; Вибратор поверхностный [156%]; Пила цепная электрическая [2.4%]; Автомобили бортовые, грузоподъемность до 8 т [7.1%]; Затраты труда рабочих-строителей Разряд 3,1 [4825.2%]; Затраты труда машинистов (справочно, входит в стоимость ЭМ) [113.2%] | 1258.43h |
| 18 | Установка диафрагм жесткости | 4d | 2009-12-23 | 2009-12-29 | 10, 9 | 3d |  | Ацетилен растворенный технический марки А; Кислород технический газообразный [0.12 м3]; Поковки из квадратных заготовок, масса 2,825 кг; Проволока наплавочная диаметром 3 мм ПП-Нп-19СТ; Электроды диаметром 6 мм Э42; Болты с гайками и шайбами строительные; Гвозди строительные; Лесоматериалы круглые хвойных пород для выработки пиломатериалов и заготовок (пластины) толщиной 20-24 см, III сорта; Доски обрезные хвойных пород длиной 4-6,5 м, шириной 75-150 мм, толщиной 44 мм и более, II сорта [0.03 м3]; Конструктивные элементы вспомогательного назначения с преобладанием профильного проката собираемые из двух и более деталей, с отверстиями и без отверстий, соединяемые на сварке [0.08 т]; Бетон [0.48 м3]; Раствор готовый кладочный цементный марки 200 [0.04 м3]; Конструкции сборные железобетонные [2.27 шт.]; Краны башенные при работе на других видах строительства 8 т [379.2%]; Установки для сварки ручной дуговой(постоянного тока) [305.7%]; Аппарат для газовой сварки и резки [11.6%]; Вибратор глубинный [42.7%]; Автомобили бортовые, грузоподъемность до 5 т [18.9%]; Затраты труда рабочих-строителей Разряд 4,2 [2841.8%]; Затраты труда машинистов (справочно, входит в стоимость ЭМ) [379.2%] | 1273.3h |
| 19 | Установка колонн прямоугольного сечения в стаканы фундаментов зданий | 8d | 2010-01-04 | 2010-01-13 | 18, 11 | 0d |  | Доски обрезные хвойных пород длиной 2-3,75 м, шириной 75-150 мм, толщиной 44 мм и более, II сорта [0.11 м3]; Бетон [3.67 м3]; Конструкции сборные железобетонные [34 шт.]; Краны на гусеничном ходу при работе на других видах строительства 25 т [6006.1%]; Вибратор глубинный [308.4%]; Автомобили бортовые, грузоподъемность до 5 т [6.8%]; Тягачи седельные, грузоподъемность 15 т [1272.6%]; Полуприцепы-тяжеловозы, грузоподъемность 40 т [1272.6%]; Затраты труда рабочих-строителей Разряд 3,7 [42646.2%]; Затраты труда машинистов (справочно, входит в стоимость ЭМ) [6006.1%] | 36812h |
| 20 | Укладка плит перекрытий | 6d | 2010-01-14 | 2010-01-21 | 19, 12 | 0d |  | Проволока горячекатаная в мотках, диаметром 6,3-6,5 мм [0.04 т]; Рубероид подкладочный с пылевидной посыпкой РПП-300б [95.16 м2]; Смазка солидол жировой марки <Ж> [0.01 т]; Электроды диаметром 6 мм Э42 [0.03 т]; Доски обрезные хвойных пород длиной 4-6,5 м, шириной 75-150 мм, толщиной 32-40 мм, IV сорта [0.82 м3]; Конструктивные элементы вспомогательного назначения с преобладанием профильного проката собираемые из двух и более деталей, с отверстиями и без отверстий, соединяемые на сварке [0.25 т]; Горячекатаная арматурная сталь гладкая класса А-I, диаметром 14 мм [0.02 т]; Бетон [20.39 м3]; Конструкции сборные железобетонные [97.1 шт.]; Краны на гусеничном ходу при работе на других видах строительства 40 т [3105.2%]; Установки для сварки ручной дуговой(постоянного тока) [920.5%]; Автомобили бортовые, грузоподъемность до 5 т [1201.1%]; Затраты труда рабочих-строителей Разряд 3,6 [21663.3%]; Затраты труда машинистов (справочно, входит в стоимость ЭМ) [3105.2%] | 14397.7h |
| 21 | Укладка блоков и плит ленточных фундаментов | 5d | 2010-01-22 | 2010-01-28 | 20, 13 | 0d |  | Конструкции сборные железобетонные [21 шт.]; Песок для строительных работ природный [8.29 м3]; Краны на гусеничном ходу при работе на других видах строительства 25 т [941.2%]; Автопогрузчики 5 т [91.3%]; Компрессоры передвижные с двигателем внутреннего сгорания давлением до 686 кПа(7 ат), производительность 5 м3/мин [25.4%]; Трамбовки пневматические при работе от стационарного компрессора [101%]; Тягачи седельные, грузоподъемность 15 т [294.6%]; Полуприцепы-тяжеловозы, грузоподъемность 40 т [294.6%]; Затраты труда рабочих-строителей Разряд 3,6 [3916.1%]; Затраты труда машинистов (справочно, входит в стоимость ЭМ) [1058%] | 2688.92h |
| 22 | Установка перегородок из гипсовых плит | 1d | 2010-01-28 | 2010-01-29 | 21, 14 | 0d |  | Гвозди проволочные круглые формовочные 1,6х100 мм; Поковки из квадратных заготовок, масса 1,8 кг; Толь с крупнозернистой посыпкой марки ТВК-350 [0.45 м2]; Плиты гипсовые толщиной до 100 мм [6.83 м2]; Бруски обрезные хвойных пород длиной 4-6,5 м, шириной 75-150 мм, толщиной 40-75 мм, III сорта; Горячекатаная арматурная сталь класс а А-I; Гипсовые вяжущие, марка Г3 [0.04 т]; Песок для строительных работ природный [0.04 м3]; Вода [0.02 м3]; Краны башенные при работе на других видах строительства 8 т [16.1%]; Автомобили бортовые, грузоподъемность до 5 т [8%]; Затраты труда рабочих-строителей Разряд 3,6 [726.2%]; Затраты труда машинистов (справочно, входит в стоимость ЭМ) [16.1%] | 61.31h |
| 23 | Укладка перемычек | 5d | 2010-02-01 | 2010-02-05 | 22, 15 | 0d |  | Раствор готовый кладочный цементный марки 50 [0.1 м3]; Конструкции сборные железобетонные [30 шт.]; Краны башенные при работе на других видах строительства 10 т [1295.1%]; Затраты труда рабочих-строителей Разряд 3,2 [3380.7%]; Затраты труда машинистов (справочно, входит в стоимость ЭМ) [1295.1%] | 2388.36h |
| 24 | Устройство кровель | 2d | 2010-02-05 | 2010-02-09 | 23, 16 | 0d |  | Мастика битумная кровельная горячая [0.43 т]; Материалы рулонные кровельные [156.33 м2]; Симазин 50%-ный порошок смачивающийся; Гравий для строительных работ, фракция 5 -10 мм [0.36 м3]; Краны башенные при работе на других видах строительства 8 т [15%]; Краны на автомобильном ходу при работе на других видах строительства 10 т [8.5%]; Автопогрузчики 5 т [4.4%]; Котлы битумные передвижные 400 л [349.7%]; Автомобили бортовые, грузоподъемность до 5 т [12.2%]; Затраты труда рабочих-строителей Разряд 3,8 [1010%]; Затраты труда машинистов (справочно, входит в стоимость ЭМ) [27.9%] | 228.43h |
| 25 | Устройство лестничных маршей в опалубке | 3d | 2010-02-10 | 2010-02-12 | 24, 17 | 0d |  |  |  |
| 26 | Устройство полов бетонных толщиной | 5d | 2010-02-15 | 2010-02-19 | 25 | 0d |  | Доски обрезные хвойных пород длиной 2-3,75 м, шириной 75-150 мм, толщиной 25 мм, IV сорта [0.42 м3]; Бетон тяжелый [72.04 м3]; Вода [3.53 м3]; Комплексы вакуумные типа СО-177 [7783.6%]; Затраты труда рабочих-строителей Разряд 4 [21401.5%]; Затраты труда машинистов (справочно, входит в стоимость ЭМ) [7783.6%] | 14787.5h |
| 27 | Сантехнические работы 2-я стадия | 4d | 2010-02-15 | 2010-02-18 | 25 | 22d |  |  |  |
| 28 | Электромонтажные работы 2 стадия | 4d | 2010-02-15 | 2010-02-18 | 25 | 22d |  |  |  |
| 29 | Устройство покрытий | 2d | 2010-02-22 | 2010-02-23 | 26 | 1d | 0d | Клей <Бустилат> [0.02 т]; Ветошь [0.18 кг]; Линолеум на теплозвукоизолирующей подоснове [36.02 м2]; Подъемники грузоподъемностью до 500 кг одномачтовые, высота подъема 45 м [12.4%]; Автомобили бортовые, грузоподъемность до 5 т [17.7%]; Затраты труда рабочих-строителей Разряд 2,7 [1497.4%]; Затраты труда машинистов (справочно, входит в стоимость ЭМ) [12.4%] | 246.36h |
| 30 | Устройство покрытий на цементном растворе из плиток | 3d | 2010-02-24 | 2010-02-26 | 29 | 1d | 0d | Опилки древесные [0.54 м3]; Плитки керамические для полов гладкие неглазурованные многоцветные квадратные и прямоугольные [18.01 м2]; Раствор готовый кладочный тяжелый цементный [0.23 м3]; Вода [0.68 м3]; Автопогрузчики 5 т [6.4%]; Подъемники грузоподъемностью до 500 кг одномачтовые, высота подъема 45 м [40.6%]; Автомобили бортовые, грузоподъемность до 5 т [4.9%]; Затраты труда рабочих-строителей Разряд 3,2 [2115.1%]; Затраты труда машинистов (справочно, входит в стоимость ЭМ) [47%] | 531.35h |
| 31 | Установка в жилых и общественных зданиях блоков оконных с переплетами | 4d | 2010-02-26 | 2010-03-04 | 30 | 1d | 0d | Гвозди толевые круглые 3,0х40 мм; Смола каменноугольная для дорожного строительства; Толь с крупнозернистой посыпкой гидроизоляционный марки ТГ-350 [17.7 м2]; Гвозди строительные; Пена монтажная [7.78 л]; Скобяные изделия; Шурупы строительные; Блоки оконные [15 м2]; Раствор готовый отделочный тяжелый, известковый 1:2,0 [0.02 м3]; Гипсовые вяжущие, марка Г3; Краны башенные при работе на других видах строительства 8 т [79.6%]; Краны на автомобильном ходу при работе на других видах строительства 10 т [22.2%]; Котлы битумные передвижные 400 л [35.7%]; Шуруповерт [152.5%]; Автомобили бортовые, грузоподъемность до 5 т [33.3%]; Затраты труда рабочих-строителей Разряд 3,4 [2829%]; Затраты труда машинистов (справочно, входит в стоимость ЭМ) [101.8%] | 1041.36h |
| 32 | Установка деревянных дверных блоков | 2d | 2010-03-04 | 2010-03-08 | 31 | 1d | 0d | Гвозди строительные; Скобяные изделия; Блоки дверные [18 м2]; Краны на автомобильном ходу при работе на других видах строительства 10 т [24.7%]; Автомобили бортовые, грузоподъемность до 5 т [37.1%]; Затраты труда рабочих-строителей Разряд 3,2 [1316.5%]; Затраты труда машинистов (справочно, входит в стоимость ЭМ) [24.7%] | 224.47h |
| 33 | Установка деревянных подоконных досок в каменных стенах | 1d | 2010-03-08 | 2010-03-09 | 32 | 1d |  | Смола каменноугольная для дорожного строительства; Войлок строительный; Толь с крупнозернистой посыпкой гидроизоляционный марки ТГ-350 [0.45 м2]; Гвозди строительные; Натрий фтористый технический, марка А, сорт I; Доски подоконные деревянные [5.92 метры]; Раствор готовый отделочный тяжелый, известковый 1:3 [0.03 м3]; Гипсовые вяжущие, марка Г3 [0.02 т]; Вода [0.05 м3]; Краны башенные при работе на других видах строительства 8 т [1.6%]; Котлы битумные передвижные 400 л [8%]; Автомобили бортовые, грузоподъемность до 5 т [2.2%]; Затраты труда рабочих-строителей Разряд 3,1 [529.8%]; Затраты труда машинистов (справочно, входит в стоимость ЭМ) [1.6%] | 43.45h |
| 34 | Устройство полов бетонных толщиной | 5d | 2010-02-22 | 2010-02-26 | 26 | 0d |  | Доски обрезные хвойных пород длиной 2-3,75 м, шириной 75-150 мм, толщиной 25 мм, IV сорта [0.2 м3]; Бетон тяжелый [34.66 м3]; Вода [1.7 м3]; Комплексы вакуумные типа СО-177 [3745%]; Затраты труда рабочих-строителей Разряд 4 [10297.2%]; Затраты труда машинистов (справочно, входит в стоимость ЭМ) [3745%] | 7114.89h |
| 35 | Устройство покрытий | 2d | 2010-03-01 | 2010-03-02 | 34, 29 | 0d |  | Клей <Бустилат> [0.02 т]; Ветошь [0.17 кг]; Линолеум на теплозвукоизолирующей подоснове [34.66 м2]; Подъемники грузоподъемностью до 500 кг одномачтовые, высота подъема 45 м [11.9%]; Автомобили бортовые, грузоподъемность до 5 т [17%]; Затраты труда рабочих-строителей Разряд 2,7 [1440.9%]; Затраты труда машинистов (справочно, входит в стоимость ЭМ) [11.9%] | 237.07h |
| 36 | Устройство покрытий на цементном растворе из плиток | 3d | 2010-03-03 | 2010-03-05 | 35, 30 | 0d |  | Опилки древесные [1.04 м3]; Плитки керамические для полов гладкие неглазурованные многоцветные квадратные и прямоугольные [34.66 м2]; Раствор готовый кладочный тяжелый цементный [0.44 м3]; Вода [1.31 м3]; Автопогрузчики 5 т [12.2%]; Подъемники грузоподъемностью до 500 кг одномачтовые, высота подъема 45 м [78.2%]; Автомобили бортовые, грузоподъемность до 5 т [9.5%]; Затраты труда рабочих-строителей Разряд 3,2 [4070.6%]; Затраты труда машинистов (справочно, входит в стоимость ЭМ) [90.4%] | 1022.62h |
| 37 | Установка в жилых и общественных зданиях блоков оконных с переплетами | 2d | 2010-03-05 | 2010-03-09 | 36, 31 | 0d |  | Гвозди толевые круглые 3,0х40 мм; Смола каменноугольная для дорожного строительства; Толь с крупнозернистой посыпкой гидроизоляционный марки ТГ-350 [8.85 м2]; Гвозди строительные; Пена монтажная [3.89 л]; Скобяные изделия; Шурупы строительные; Блоки оконные [7.5 м2]; Раствор готовый отделочный тяжелый, известковый 1:2,0 [0.01 м3]; Гипсовые вяжущие, марка Г3; Краны башенные при работе на других видах строительства 8 т [39.8%]; Краны на автомобильном ходу при работе на других видах строительства 10 т [11.1%]; Котлы битумные передвижные 400 л [17.9%]; Шуруповерт [76.3%]; Автомобили бортовые, грузоподъемность до 5 т [16.6%]; Затраты труда рабочих-строителей Разряд 3,4 [1414.5%]; Затраты труда машинистов (справочно, входит в стоимость ЭМ) [50.9%] | 260.34h |
| 38 | Установка деревянных дверных блоков | 1d | 2010-03-09 | 2010-03-10 | 37, 32 | 0d |  | Гвозди строительные; Скобяные изделия; Блоки дверные [9 м2]; Краны на автомобильном ходу при работе на других видах строительства 10 т [12.3%]; Автомобили бортовые, грузоподъемность до 5 т [18.5%]; Затраты труда рабочих-строителей Разряд 3,2 [658.3%]; Затраты труда машинистов (справочно, входит в стоимость ЭМ) [12.3%] | 56.12h |
| 39 | Установка деревянных подоконных досок в каменных стенах | 1d | 2010-03-10 | 2010-03-11 | 38, 33 | 0d |  | Смола каменноугольная для дорожного строительства; Войлок строительный; Толь с крупнозернистой посыпкой гидроизоляционный марки ТГ-350 [0.06 м2]; Гвозди строительные; Натрий фтористый технический, марка А, сорт I; Доски подоконные деревянные [0.74 метры]; Раствор готовый отделочный тяжелый, известковый 1:3; Гипсовые вяжущие, марка Г3; Вода; Краны башенные при работе на других видах строительства 8 т [0.2%]; Котлы битумные передвижные 400 л [1%]; Автомобили бортовые, грузоподъемность до 5 т [0.3%]; Затраты труда рабочих-строителей Разряд 3,1 [66.2%]; Затраты труда машинистов (справочно, входит в стоимость ЭМ) [0.2%] | 5.43h |
| 40 | Монтаж оборудования | 7d | 2010-03-12 | 2010-03-22 | 39 | 0d |  |  |  |
| 41 | Дороги, подъезды тротуары | 5d | 2010-03-23 | 2010-03-29 | 40, 27, 28 | 0d |  |  |  |
| 42 | Озеленение | 1d | 2010-03-30 | 2010-03-30 | 41 | 0d |  |  |  |
| 43 | Пусконаладочные работы | 3d | 2010-03-31 | 2010-04-02 | 42, 3 | 0d |  |  |  |
| 44 | Ввод в эксплуатацию | 1d | 2010-04-05 | 2010-04-05 | 43 | 0d |  |  |  |
