# График Ганта

Schedule from MS Project, 2024-04-22 to 2024-12-31.

## Calendars

- Стандартный: Mon-Fri 09:00-13:00, 14:00-18:00; Sat-Sun off.

## Resources

| Resource | Group | Unit |
| --- | --- | --- |
| Котлы битумные передвижные 400 л | Машины |  |
| Затраты труда рабочих-строителей Разряд 3 | Рабочие |  |
| Затраты труда рабочих-строителей Разряд 3,1 | Рабочие |  |
| Дюбель с шурупом 6/35 мм |  | шт. |
| Мастика клеящая каучуковая, марки КН-2 |  | кг |
| Электроды диаметром 4 мм Э42 |  | т |
| Мастика битумно-полимерная |  | т |
| Материалы рулонные кровельные для нижних слоев |  | м2 |
| Профиль направляющий |  | метры |
| Бруски обрезные хвойных пород длиной 4-6,5 м, шириной 75-150 мм, толщиной 40-75 мм, IV сорта |  | м3 |
| Шпаклевка <Фугенфюллер>, КНАУФ |  | кг |
| Вода |  | м3 |
| Карборунд |  | кг |
| Стойки рудничные длиной 2,5-3,9 м |  | м3 |
| Рогожа |  | м2 |
| Шуруп самонарезающий (TN) 3,5/25 мм |  | шт. |
| Олифа комбинированная, марки К-2 |  | т |
| Установки для сварки ручной дуговой(постоянного тока) | Машины |  |
| Бетон |  | м3 |
| Краны на гусеничном ходу при работе на других видах строительства 25 т | Машины |  |
| Элементы крепления нащельников и деталей обрамления (самонарезающиеся винты, заклепки т.д.) |  | т |
| Лента разделительная для сопряжения потолка из ЛГК со стеной |  | метры |
| Затраты труда рабочих-строителей Разряд 2,7 | Рабочие |  |
| Раствор декоративный (с каменной крошкой) |  | м3 |
| Стеклопакеты двухслойные из неполированного стекла толщиной 4 мм |  | м2 |
| Экскаваторы одноковшовые дизельные на гусеничном ходу при работе на других видах строительства 0,65 м3 | Машины |  |
| Автопогрузчики 5 т | Машины |  |
| Арматура |  | т |
| Опилки древесные |  | м3 |
| Лента уплотнительная типа Дихтунгсбанд |  | метры |
| Ветошь |  | кг |
| Раствор тампонажный |  | м3 |
| Мастика битумно-кукерсольная холодная |  | т |
| Затраты труда рабочих-строителей Разряд 3,5 | Рабочие |  |
| Затраты труда машинистов (справочно, входит в стоимость ЭМ) | Рабочие |  |
| Стекло оконное |  | м2 |
| Рубероид подкладочный с пылевидной посыпкой РПП-300б |  | м2 |
| Затраты труда рабочих-строителей Разряд 3,8 | Рабочие |  |
| Листы гипсокартонные ГКЛ 12,5 мм |  | м2 |
| Пила дисковая электрическая | Машины |  |
| Проволока горячекатаная в мотках, диаметром 6,3-6,5 мм |  | т |
| Машина паркетно-шлифовальная | Машины |  |
| Вибратор глубинный | Машины |  |
| Доски обрезные хвойных пород длиной 4-6,5 м, шириной 75-150 мм, толщиной 25 мм, II сорта |  | м3 |
| Конструкции сборные железобетонные |  | шт. |
| Машины мозаично-шлифовальные | Машины |  |
| Затраты труда рабочих-строителей Разряд 4,5 | Рабочие |  |
| Дюбель-гвоздь 6/39 мм |  | шт. |
| Скобяные изделия |  | компл. |
| Блоки дверные |  | м2 |
| Замазка оконная на олифе |  | т |
| Материалы теплоизоляционные из минеральных волокон |  | м2 |
| Грунтовка <Тифенгрунд>, КНАУФ |  | кг |
| Подъемники грузоподъемностью до 500 кг одномачтовые, высота подъема 45 м | Машины |  |
| Гвозди строительные |  | т |
| Конструктивные элементы вспомогательного назначения с преобладанием профильного проката собираемые из двух и более деталей, с отверстиями и без отверстий, соединяемые на сварке |  | т |
| Дрели электрические | Машины |  |
| Горячекатаная арматурная сталь класс а А-I |  | т |
| Краны на пневмоколесном ходу при работе на других видах строительства 25 т | Машины |  |
| Лебедки вспомогательные шахтные с тяговым усилием 13,73 кН (1,4 т) | Машины |  |
| Плитки керамические для полов гладкие неглазурованные одноцветные с красителем квадратные и прямоугольные |  | м2 |
| Краны на автомобильном ходу при работе на других видах строительства 10 т | Машины |  |
| Доски обрезные хвойных пород длиной 4-6,5 м, шириной 75-150 мм, толщиной 44 мм и более, II сорта |  | м3 |
| Бруски обрезные хвойных пород длиной 4-6,5 м, шириной 75-150 мм, толщиной 40-75 мм, III сорта |  | м3 |
| Материалы рулонные кровельные для верхнего слоя |  | м2 |
| Пневмобетоноукладчики 3,3 м3 | Машины |  |
| Поковки из квадратных заготовок, масса 1,8 кг |  | т |
| Краны башенные при работе на других видах строительства 8 т | Машины |  |
| Болты с гайками и шайбами строительные |  | т |
| Верхний уголок для крепления несущих элементов двери 100x123 мм |  | шт. |
| Бетонные смеси готовые к употреблению |  | м3 |
| Раствор готовый кладочный тяжелый цементный |  | м3 |
| Паркет штучный |  | м2 |
| Кирпич керамический, силикатный или пустотелый |  | 1000 шт. |
| Линолеум на теплозвукоизолирующей подоснове |  | м2 |
| Известь строительная негашеная комовая, сорт I |  | т |
| Щиты из досок толщиной 25 мм |  | м2 |
| Электроды диаметром 6 мм Э42 |  | т |
| Затраты труда рабочих-строителей Разряд 3,4 | Рабочие |  |
| Доски обрезные хвойных пород длиной 4-6,5 м, шириной 75-150 мм, толщиной 44 мм и более, III сорта |  | м3 |
| Лента бумажная для повышения трещиностойкости стыков ГКЛ и ГВЛ |  | метры |
| Нащельники и детали обрамления из алюминиевых сплавов |  | т |
| Горячекатаная арматурная сталь гладкая класса А-I, диаметром 14 мм |  | т |
| Машина для острожки деревянных полов | Машины |  |
| Вибратор поверхностный | Машины |  |
| Смазка солидол жировой марки <Ж> |  | т |
| Затраты труда рабочих-строителей Разряд 3,6 | Рабочие |  |
| Шпаклевка <Унифлот>, КНАУФ |  | кг |
| Шуруповерт | Машины |  |
| Бульдозеры при работе на других видах строительства 79 кВт (108 л.с.) | Машины |  |
| Профиль стоечный |  | метры |
| Клей <Бустилат> |  | т |
| Нижний уголок для крепления несущих элементов двери 100x123 мм |  | шт. |
| Пила цепная электрическая | Машины |  |
| Затраты труда рабочих-строителей Разряд 3,2 | Рабочие |  |
| Автогрейдеры среднего типа 99 кВт(135 л.с.) | Машины |  |
| Бруски деревянные |  | метры |
| Раствор готовый кладочный цементный марки 50 |  | м3 |
| Раствор готовый кладочный |  | м3 |
| Затраты труда рабочих-строителей Разряд 4,2 | Рабочие |  |
| Ножницы электрические | Машины |  |
| Доски обрезные хвойных пород длиной 4-6,5 м, шириной 75-150 мм, толщиной 32-40 мм, IV сорта |  | м3 |
| Блоки оконные из алюминиевых сплавов |  | т |
| Мыло твердое хозяйственное 72% |  | шт. |
| Перфораторы электрические | Машины |  |
| Автомобили бортовые, грузоподъемность до 5 т | Машины |  |

## Schedule

| ID | WBS | Task | Duration | Start | Finish | Predecessors | Total slack | Free slack | Constraint | Resources | Work |
| --- | --- | --- | --- | --- | --- | --- | --- | --- | --- | --- | --- |
| 1 | 1 | **Клуб** | 182d | 2024-04-22 | 2024-12-31 |  | 0d |  |  |  | 8178.77h |
| 2 | 1.1 | Подготовительные работы | 9d | 2024-04-22 | 2024-05-02 |  | 0d |  | start no earlier than 2024-04-22 |  |  |
| 3 | 1.2 | Планировка площадей | 1d | 2024-05-03 | 2024-05-03 | 2 | 0d |  |  | Бульдозеры при работе на других видах строительства 79 кВт (108 л.с.); Автогрейдеры среднего типа 99 кВт(135 л.с.); Затраты труда машинистов (справочно, входит в стоимость ЭМ) | 17.85h |
| 4 | 1.3 | Прочие и неучтенные общестроительные работы | 12d | 2024-05-03 | 2024-05-20 | 2 | 160d |  |  |  |  |
| 5 | 1.4 | Разработка грунта | 1d | 2024-05-06 | 2024-05-06 | 3 | 0d |  |  | Экскаваторы одноковшовые дизельные на гусеничном ходу при работе на других видах строительства 0,65 м3; Затраты труда машинистов (справочно, входит в стоимость ЭМ) | 1.67h |
| 6 | 1.5 | Устройство ленточных фундаментов | 15d | 2024-05-07 | 2024-05-27 | 5 | 0d |  |  | Проволока горячекатаная в мотках, диаметром 6,3-6,5 мм [0.1 т]; Рогожа [308.13 м2]; Гвозди строительные [0.06 т]; Доски обрезные хвойных пород длиной 4-6,5 м, шириной 75-150 мм, толщиной 44 мм и более, III сорта [0.77 м3]; Щиты из досок толщиной 25 мм [156.51 м2]; Бетон [356.34 м3]; Известь строительная негашеная комовая, сорт I [0.09 т]; Вода [0.99 м3]; Краны башенные при работе на других видах строительства 8 т; Краны на автомобильном ходу при работе на других видах строительства 10 т; Автопогрузчики 5 т; Вибратор глубинный; Пила цепная электрическая; Автомобили бортовые, грузоподъемность до 5 т; Затраты труда рабочих-строителей Разряд 3,1; Затраты труда машинистов (справочно, входит в стоимость ЭМ) | 1395.9h |
| 7 | 1.6 | Укладка плит перекрытия | 3d | 2024-05-27 | 2024-05-30 | 6 | 0d |  |  | Проволока горячекатаная в мотках, диаметром 6,3-6,5 мм; Рубероид подкладочный с пылевидной посыпкой РПП-300б [16.47 м2]; Смазка солидол жировой марки <Ж>; Электроды диаметром 6 мм Э42; Доски обрезные хвойных пород длиной 4-6,5 м, шириной 75-150 мм, толщиной 32-40 мм, IV сорта [0.14 м3]; Конструктивные элементы вспомогательного назначения с преобладанием профильного проката собираемые из двух и более деталей, с отверстиями и без отверстий, соединяемые на сварке [0.04 т]; Горячекатаная арматурная сталь гладкая класса А-I, диаметром 14 мм; Бетон [3.53 м3]; Конструкции сборные железобетонные [16.8 шт.]; Краны на гусеничном ходу при работе на других видах строительства 25 т; Установки для сварки ручной дуговой(постоянного тока); Автомобили бортовые, грузоподъемность до 5 т; Затраты труда рабочих-строителей Разряд 3,6; Затраты труда машинистов (справочно, входит в стоимость ЭМ) | 51.91h |
| 8 | 1.7 | Сантехнические работы (1-я стадия) | 14d | 2024-05-31 | 2024-06-19 | 7 | 68d |  |  |  |  |
| 9 | 1.8 | Электромонтажные работы (1-я стадия) | 15d | 2024-05-31 | 2024-06-20 | 7 | 67d |  |  |  |  |
| 10 | 1.9 | Устройство стен бетонных до 3 м | 7d | 2024-05-31 | 2024-06-10 | 7 | 0d |  |  | Электроды диаметром 4 мм Э42 [0.07 т]; Болты с гайками и шайбами строительные [0.03 т]; Гвозди строительные [0.02 т]; Бруски обрезные хвойных пород длиной 4-6,5 м, шириной 75-150 мм, толщиной 40-75 мм, III сорта [0.05 м3]; Доски обрезные хвойных пород длиной 4-6,5 м, шириной 75-150 мм, толщиной 44 мм и более, III сорта [0.54 м3]; Щиты из досок толщиной 25 мм [25.9 м2]; Арматура [3.54 т]; Бетон [35.52 м3]; Известь строительная негашеная комовая, сорт I [0.01 т]; Вода [0.04 м3]; Краны башенные при работе на других видах строительства 8 т; Краны на автомобильном ходу при работе на других видах строительства 10 т; Автопогрузчики 5 т; Установки для сварки ручной дуговой(постоянного тока); Вибратор глубинный; Пила цепная электрическая; Автомобили бортовые, грузоподъемность до 5 т; Затраты труда рабочих-строителей Разряд 3,2; Затраты труда машинистов (справочно, входит в стоимость ЭМ) | 410.83h |
| 11 | 1.10 | Устройство жб стен и перегородок высотой 6м/ 300мм | 11d | 2024-06-11 | 2024-06-25 | 10 | 0d |  |  | Электроды диаметром 4 мм Э42 [0.07 т]; Болты с гайками и шайбами строительные [0.03 т]; Гвозди строительные [0.02 т]; Бруски обрезные хвойных пород длиной 4-6,5 м, шириной 75-150 мм, толщиной 40-75 мм, III сорта [0.05 м3]; Доски обрезные хвойных пород длиной 4-6,5 м, шириной 75-150 мм, толщиной 44 мм и более, III сорта [0.62 м3]; Щиты из досок толщиной 25 мм [26.46 м2]; Арматура [3.67 т]; Бетон [27.41 м3]; Известь строительная негашеная комовая, сорт I [0.02 т]; Вода [0.06 м3]; Краны башенные при работе на других видах строительства 8 т; Краны на автомобильном ходу при работе на других видах строительства 10 т; Автопогрузчики 5 т; Установки для сварки ручной дуговой(постоянного тока); Вибратор глубинный; Пила цепная электрическая; Автомобили бортовые, грузоподъемность до 5 т; Затраты труда рабочих-строителей Разряд 3,2; Затраты труда машинистов (справочно, входит в стоимость ЭМ) | 444.9h |
| 12 | 1.11 | Устройство жб стен и перегородок высотой 6м/ 500мм | 6d | 2024-06-25 | 2024-07-03 | 11 | 0d |  |  | Электроды диаметром 4 мм Э42 [0.02 т]; Болты с гайками и шайбами строительные [0.01 т]; Гвозди строительные; Бруски обрезные хвойных пород длиной 4-6,5 м, шириной 75-150 мм, толщиной 40-75 мм, III сорта [0.01 м3]; Доски обрезные хвойных пород длиной 4-6,5 м, шириной 75-150 мм, толщиной 44 мм и более, III сорта [0.18 м3]; Щиты из досок толщиной 25 мм [7.75 м2]; Арматура [1.06 т]; Бетон [10.62 м3]; Известь строительная негашеная комовая, сорт I; Вода [0.01 м3]; Краны башенные при работе на других видах строительства 8 т; Краны на автомобильном ходу при работе на других видах строительства 10 т; Автопогрузчики 5 т; Установки для сварки ручной дуговой(постоянного тока); Вибратор глубинный; Пила цепная электрическая; Автомобили бортовые, грузоподъемность до 5 т; Затраты труда рабочих-строителей Разряд 3,2; Затраты труда машинистов (справочно, входит в стоимость ЭМ) | 126.18h |
| 13 | 1.12 | Кладка перегородок из кирпича | 13d | 2024-07-03 | 2024-07-22 | 12 | 0d |  |  | Поковки из квадратных заготовок, масса 1,8 кг; Бруски обрезные хвойных пород длиной 4-6,5 м, шириной 75-150 мм, толщиной 40-75 мм, IV сорта [0.05 м3]; Горячекатаная арматурная сталь класс а А-I [0.27 т]; Раствор готовый кладочный [6.79 м3]; Кирпич керамический, силикатный или пустотелый [14.87 1000 шт.]; Вода [0.89 м3]; Краны башенные при работе на других видах строительства 8 т; Автомобили бортовые, грузоподъемность до 5 т; Затраты труда рабочих-строителей Разряд 3; Затраты труда машинистов (справочно, входит в стоимость ЭМ) | 424.77h |
| 14 | 1.13 | Устройство перегородок из гипсокартона | 10d | 2024-07-23 | 2024-08-05 | 13 | 0d |  |  | Грунтовка <Тифенгрунд>, КНАУФ [59 кг]; Шпаклевка <Унифлот>, КНАУФ [29.5 кг]; Шпаклевка <Фугенфюллер>, КНАУФ [227.15 кг]; Лента бумажная для повышения трещиностойкости стыков ГКЛ и ГВЛ [522.15 метры]; Лента разделительная для сопряжения потолка из ЛГК со стеной [477.9 метры]; Листы гипсокартонные ГКЛ 12,5 мм [666.7 м2]; Шуруп самонарезающий (TN) 3,5/25 мм [11174.6 шт.]; Дюбель-гвоздь 6/39 мм [206.5 шт.]; Дюбель с шурупом 6/35 мм [480.85 шт.]; Лента уплотнительная типа Дихтунгсбанд [345.15 метры]; Материалы теплоизоляционные из минеральных волокон [303.85 м2]; Верхний уголок для крепления несущих элементов двери 100x123 мм [41.3 шт.]; Нижний уголок для крепления несущих элементов двери 100x123 мм [41.3 шт.]; Профиль направляющий [466.1 метры]; Профиль стоечный [749.3 метры]; Бруски деревянные [115.05 метры]; Шуруповерт; Ножницы электрические; Перфораторы электрические; Затраты труда рабочих-строителей Разряд 3,5 | 318.33h |
| 15 | 1.14 | Укладка перемычек | 4d | 2024-08-06 | 2024-08-09 | 14 | 0d |  |  | Раствор готовый кладочный цементный марки 50 [0.07 м3]; Конструкции сборные железобетонные [29 шт.]; Краны башенные при работе на других видах строительства 8 т; Затраты труда рабочих-строителей Разряд 3,2; Затраты труда машинистов (справочно, входит в стоимость ЭМ) | 48.84h |
| 16 | 1.15 | Устройство лестник и площадок | 13d | 2024-08-09 | 2024-08-28 | 15 | 0d |  |  | Поковки из квадратных заготовок, масса 1,8 кг; Электроды диаметром 4 мм Э42; Гвозди строительные; Стойки рудничные длиной 2,5-3,9 м [0.58 м3]; Доски обрезные хвойных пород длиной 4-6,5 м, шириной 75-150 мм, толщиной 25 мм, II сорта [0.16 м3]; Доски обрезные хвойных пород длиной 4-6,5 м, шириной 75-150 мм, толщиной 44 мм и более, II сорта [2.13 м3]; Арматура; Бетонные смеси готовые к употреблению [10.05 м3]; Раствор тампонажный [0.43 м3]; Вода [0.2 м3]; Лебедки вспомогательные шахтные с тяговым усилием 13,73 кН (1,4 т); Установки для сварки ручной дуговой(постоянного тока); Вибратор глубинный; Пневмобетоноукладчики 3,3 м3; Пила цепная электрическая; Затраты труда рабочих-строителей Разряд 4,5 | 421.33h |
| 17 | 1.16 | Устройство кровель плоских | 5d | 2024-08-29 | 2024-09-04 | 16 | 8d |  |  | Мастика битумно-полимерная [3.21 т]; Материалы рулонные кровельные для верхнего слоя [525.67 м2]; Материалы рулонные кровельные для нижних слоев [1043 м2]; Краны башенные при работе на других видах строительства 8 т; Краны на автомобильном ходу при работе на других видах строительства 10 т; Котлы битумные передвижные 400 л; Автомобили бортовые, грузоподъемность до 5 т; Затраты труда рабочих-строителей Разряд 3,8; Затраты труда машинистов (справочно, входит в стоимость ЭМ) | 139.34h |
| 18 | 1.17 | Укладка плит перекрытия | 2d | 2024-05-30 | 2024-06-03 | 7 | 17d | 16d |  | Проволока горячекатаная в мотках, диаметром 6,3-6,5 мм; Рубероид подкладочный с пылевидной посыпкой РПП-300б [10.98 м2]; Смазка солидол жировой марки <Ж>; Электроды диаметром 6 мм Э42; Доски обрезные хвойных пород длиной 4-6,5 м, шириной 75-150 мм, толщиной 32-40 мм, IV сорта [0.09 м3]; Конструктивные элементы вспомогательного назначения с преобладанием профильного проката собираемые из двух и более деталей, с отверстиями и без отверстий, соединяемые на сварке [0.03 т]; Горячекатаная арматурная сталь гладкая класса А-I, диаметром 14 мм; Бетон [2.35 м3]; Конструкции сборные железобетонные [11.2 шт.]; Краны на гусеничном ходу при работе на других видах строительства 25 т; Установки для сварки ручной дуговой(постоянного тока); Автомобили бортовые, грузоподъемность до 5 т; Затраты труда рабочих-строителей Разряд 3,6; Затраты труда машинистов (справочно, входит в стоимость ЭМ) | 34.6h |
| 19 | 1.18 | Устройство жб стен и перегородок высотой 6м/ 300мм | 14d | 2024-06-26 | 2024-07-15 | 11, 18 | 1d | 0d |  | Электроды диаметром 4 мм Э42 [0.12 т]; Болты с гайками и шайбами строительные [0.06 т]; Гвозди строительные [0.04 т]; Бруски обрезные хвойных пород длиной 4-6,5 м, шириной 75-150 мм, толщиной 40-75 мм, III сорта [0.08 м3]; Доски обрезные хвойных пород длиной 4-6,5 м, шириной 75-150 мм, толщиной 44 мм и более, III сорта [1.06 м3]; Щиты из досок толщиной 25 мм [45.16 м2]; Арматура [6.27 т]; Бетон [46.77 м3]; Известь строительная негашеная комовая, сорт I [0.03 т]; Вода [0.09 м3]; Краны башенные при работе на других видах строительства 8 т; Краны на автомобильном ходу при работе на других видах строительства 10 т; Автопогрузчики 5 т; Установки для сварки ручной дуговой(постоянного тока); Вибратор глубинный; Пила цепная электрическая; Автомобили бортовые, грузоподъемность до 5 т; Затраты труда рабочих-строителей Разряд 3,2; Затраты труда машинистов (справочно, входит в стоимость ЭМ) | 759.3h |
| 20 | 1.19 | Устройство жб стен и перегородок высотой 6м/ 500мм | 13d | 2024-07-16 | 2024-08-01 | 12, 19 | 1d | 0d |  | Электроды диаметром 4 мм Э42 [0.22 т]; Болты с гайками и шайбами строительные [0.1 т]; Гвозди строительные [0.06 т]; Бруски обрезные хвойных пород длиной 4-6,5 м, шириной 75-150 мм, толщиной 40-75 мм, III сорта [0.16 м3]; Доски обрезные хвойных пород длиной 4-6,5 м, шириной 75-150 мм, толщиной 44 мм и более, III сорта [1.92 м3]; Щиты из досок толщиной 25 мм [82.14 м2]; Арматура [11.21 т]; Бетон [112.67 м3]; Известь строительная негашеная комовая, сорт I [0.05 т]; Вода [0.14 м3]; Краны башенные при работе на других видах строительства 8 т; Краны на автомобильном ходу при работе на других видах строительства 10 т; Автопогрузчики 5 т; Установки для сварки ручной дуговой(постоянного тока); Вибратор глубинный; Пила цепная электрическая; Автомобили бортовые, грузоподъемность до 5 т; Затраты труда рабочих-строителей Разряд 3,2; Затраты труда машинистов (справочно, входит в стоимость ЭМ) | 1338.08h |
| 21 | 1.20 | Кладка перегородок из кирпича | 8d | 2024-08-01 | 2024-08-13 | 13, 20 | 1d | 0d |  | Поковки из квадратных заготовок, масса 1,8 кг; Бруски обрезные хвойных пород длиной 4-6,5 м, шириной 75-150 мм, толщиной 40-75 мм, IV сорта [0.04 м3]; Горячекатаная арматурная сталь класс а А-I [0.2 т]; Раствор готовый кладочный [5.19 м3]; Кирпич керамический, силикатный или пустотелый [11.37 1000 шт.]; Вода [0.68 м3]; Краны башенные при работе на других видах строительства 8 т; Автомобили бортовые, грузоподъемность до 5 т; Затраты труда рабочих-строителей Разряд 3; Затраты труда машинистов (справочно, входит в стоимость ЭМ) | 324.84h |
| 22 | 1.21 | Устройство перегородок из гипсокартона | 8d | 2024-08-14 | 2024-08-23 | 14, 21 | 1d | 0d |  | Грунтовка <Тифенгрунд>, КНАУФ [45.12 кг]; Шпаклевка <Унифлот>, КНАУФ [22.56 кг]; Шпаклевка <Фугенфюллер>, КНАУФ [173.71 кг]; Лента бумажная для повышения трещиностойкости стыков ГКЛ и ГВЛ [399.31 метры]; Лента разделительная для сопряжения потолка из ЛГК со стеной [365.47 метры]; Листы гипсокартонные ГКЛ 12,5 мм [509.86 м2]; Шуруп самонарезающий (TN) 3,5/25 мм [8545.73 шт.]; Дюбель-гвоздь 6/39 мм [157.92 шт.]; Дюбель с шурупом 6/35 мм [367.73 шт.]; Лента уплотнительная типа Дихтунгсбанд [263.95 метры]; Материалы теплоизоляционные из минеральных волокон [232.37 м2]; Верхний уголок для крепления несущих элементов двери 100x123 мм [31.58 шт.]; Нижний уголок для крепления несущих элементов двери 100x123 мм [31.58 шт.]; Профиль направляющий [356.45 метры]; Профиль стоечный [573.02 метры]; Бруски деревянные [87.98 метры]; Шуруповерт; Ножницы электрические; Перфораторы электрические; Затраты труда рабочих-строителей Разряд 3,5 | 243.44h |
| 23 | 1.22 | Укладка перемычек | 2d | 2024-08-26 | 2024-08-27 | 15, 22 | 1d |  |  | Раствор готовый кладочный цементный марки 50 [0.07 м3]; Конструкции сборные железобетонные [30 шт.]; Краны башенные при работе на других видах строительства 8 т; Затраты труда рабочих-строителей Разряд 3,2; Затраты труда машинистов (справочно, входит в стоимость ЭМ) | 50.53h |
| 24 | 1.23 | Устройство лестник и площадок | 13d | 2024-08-28 | 2024-09-16 | 16, 23 | 0d |  |  | Поковки из квадратных заготовок, масса 1,8 кг; Электроды диаметром 4 мм Э42; Гвозди строительные [0.01 т]; Стойки рудничные длиной 2,5-3,9 м [0.76 м3]; Доски обрезные хвойных пород длиной 4-6,5 м, шириной 75-150 мм, толщиной 25 мм, II сорта [0.2 м3]; Доски обрезные хвойных пород длиной 4-6,5 м, шириной 75-150 мм, толщиной 44 мм и более, II сорта [2.79 м3]; Арматура; Бетонные смеси готовые к употреблению [13.2 м3]; Раствор тампонажный [0.56 м3]; Вода [0.26 м3]; Лебедки вспомогательные шахтные с тяговым усилием 13,73 кН (1,4 т); Установки для сварки ручной дуговой(постоянного тока); Вибратор глубинный; Пневмобетоноукладчики 3,3 м3; Пила цепная электрическая; Затраты труда рабочих-строителей Разряд 4,5 | 553.26h |
| 25 | 1.24 | Устройство кровель плоских | 5d | 2024-09-17 | 2024-09-23 | 17, 24 | 0d |  |  | Мастика битумно-полимерная [2.86 т]; Материалы рулонные кровельные для верхнего слоя [467.84 м2]; Материалы рулонные кровельные для нижних слоев [928.25 м2]; Краны башенные при работе на других видах строительства 8 т; Краны на автомобильном ходу при работе на других видах строительства 10 т; Котлы битумные передвижные 400 л; Автомобили бортовые, грузоподъемность до 5 т; Затраты труда рабочих-строителей Разряд 3,8; Затраты труда машинистов (справочно, входит в стоимость ЭМ) | 124.01h |
| 26 | 1.25 | Установка дверных блоков | 4d | 2024-09-23 | 2024-09-27 | 8, 9, 25 | 0d |  |  | Гвозди строительные; Скобяные изделия; Блоки дверные [84 м2]; Краны на автомобильном ходу при работе на других видах строительства 10 т; Автомобили бортовые, грузоподъемность до 5 т; Затраты труда рабочих-строителей Разряд 3,2; Затраты труда машинистов (справочно, входит в стоимость ЭМ) | 65.47h |
| 27 | 1.26 | Сантехнические работы (2-я стадия) | 9d | 2024-09-24 | 2024-10-04 | 8, 9, 25 | 39d |  |  |  |  |
| 28 | 1.27 | Электромонтажные работы (2-я стадия) | 9d | 2024-09-24 | 2024-10-04 | 8, 9, 25 | 39d |  |  |  |  |
| 29 | 1.28 | Монтаж оконных блоков | 5d | 2024-09-27 | 2024-10-04 | 26 | 0d |  |  | Болты с гайками и шайбами строительные; Стеклопакеты двухслойные из неполированного стекла толщиной 4 мм [15.04 м2]; Элементы крепления нащельников и деталей обрамления (самонарезающиеся винты, заклепки т.д.); Блоки оконные из алюминиевых сплавов; Нащельники и детали обрамления из алюминиевых сплавов; Краны на автомобильном ходу при работе на других видах строительства 10 т; Краны на пневмоколесном ходу при работе на других видах строительства 25 т; Дрели электрические; Автомобили бортовые, грузоподъемность до 5 т; Затраты труда рабочих-строителей Разряд 4,2; Затраты труда машинистов (справочно, входит в стоимость ЭМ) | 76.64h |
| 30 | 1.29 | Остекленение оконным стеклом окон | 2d | 2024-10-04 | 2024-10-08 | 29 | 0d |  |  | Замазка оконная на олифе [0.01 т]; Мыло твердое хозяйственное 72% [0.16 шт.]; Олифа комбинированная, марки К-2; Ветошь [0.03 кг]; Стекло оконное [25.12 м2]; Краны башенные при работе на других видах строительства 8 т; Автомобили бортовые, грузоподъемность до 5 т; Затраты труда рабочих-строителей Разряд 3; Затраты труда машинистов (справочно, входит в стоимость ЭМ) | 8.35h |
| 31 | 1.30 | Устройство покрытия из ленолиума | 7d | 2024-10-09 | 2024-10-17 | 30 | 0d |  |  | Клей <Бустилат> [0.19 т]; Ветошь [1.93 кг]; Линолеум на теплозвукоизолирующей подоснове [393.31 м2]; Подъемники грузоподъемностью до 500 кг одномачтовые, высота подъема 45 м; Автомобили бортовые, грузоподъемность до 5 т; Затраты труда рабочих-строителей Разряд 2,7; Затраты труда машинистов (справочно, входит в стоимость ЭМ) | 168.12h |
| 32 | 1.31 | Устройство покрытий мозаичных | 5d | 2024-10-18 | 2024-10-24 | 31 | 13d |  |  | Опилки древесные [1.17 м3]; Карборунд [0.77 кг]; Раствор декоративный (с каменной крошкой) [0.78 м3]; Вода [2.24 м3]; Автопогрузчики 5 т; Подъемники грузоподъемностью до 500 кг одномачтовые, высота подъема 45 м; Вибратор поверхностный; Машины мозаично-шлифовальные; Автомобили бортовые, грузоподъемность до 5 т; Затраты труда рабочих-строителей Разряд 3,4; Затраты труда машинистов (справочно, входит в стоимость ЭМ) | 102.23h |
| 33 | 1.32 | Установка дверных блоков | 3d | 2024-09-27 | 2024-10-02 | 26 | 2d |  |  | Гвозди строительные; Скобяные изделия; Блоки дверные [46 м2]; Краны на автомобильном ходу при работе на других видах строительства 10 т; Автомобили бортовые, грузоподъемность до 5 т; Затраты труда рабочих-строителей Разряд 3,2; Затраты труда машинистов (справочно, входит в стоимость ЭМ) | 35.85h |
| 34 | 1.33 | Монтаж оконных блоков | 7d | 2024-10-04 | 2024-10-15 | 29, 33 | 0d |  |  | Болты с гайками и шайбами строительные; Стеклопакеты двухслойные из неполированного стекла толщиной 4 мм [22.56 м2]; Элементы крепления нащельников и деталей обрамления (самонарезающиеся винты, заклепки т.д.); Блоки оконные из алюминиевых сплавов; Нащельники и детали обрамления из алюминиевых сплавов; Краны на автомобильном ходу при работе на других видах строительства 10 т; Краны на пневмоколесном ходу при работе на других видах строительства 25 т; Дрели электрические; Автомобили бортовые, грузоподъемность до 5 т; Затраты труда рабочих-строителей Разряд 4,2; Затраты труда машинистов (справочно, входит в стоимость ЭМ) | 114.97h |
| 35 | 1.34 | Остекленение оконным стеклом окон | 2d | 2024-10-15 | 2024-10-17 | 30, 34 | 0d |  |  | Замазка оконная на олифе [0.02 т]; Мыло твердое хозяйственное 72% [0.24 шт.]; Олифа комбинированная, марки К-2; Ветошь [0.05 кг]; Стекло оконное [37.68 м2]; Краны башенные при работе на других видах строительства 8 т; Автомобили бортовые, грузоподъемность до 5 т; Затраты труда рабочих-строителей Разряд 3; Затраты труда машинистов (справочно, входит в стоимость ЭМ) | 12.53h |
| 36 | 1.35 | Устройство покрытия из ленолиума | 2d | 2024-10-18 | 2024-10-21 | 31, 35 | 0d |  |  | Клей <Бустилат> [0.02 т]; Ветошь [0.24 кг]; Линолеум на теплозвукоизолирующей подоснове [49.27 м2]; Подъемники грузоподъемностью до 500 кг одномачтовые, высота подъема 45 м; Автомобили бортовые, грузоподъемность до 5 т; Затраты труда рабочих-строителей Разряд 2,7; Затраты труда машинистов (справочно, входит в стоимость ЭМ) | 21.06h |
| 37 | 1.36 | Устройство покрытия из паркета | 12d | 2024-10-22 | 2024-11-06 | 36 | 0d |  |  | Мастика битумно-кукерсольная холодная [0.05 т]; Мастика клеящая каучуковая, марки КН-2 [116.4 кг]; Опилки древесные [2.33 м3]; Паркет штучный [237.46 м2]; Вода [0.47 м3]; Подъемники грузоподъемностью до 500 кг одномачтовые, высота подъема 45 м; Пила дисковая электрическая; Машина паркетно-шлифовальная; Машина для острожки деревянных полов; Автомобили бортовые, грузоподъемность до 5 т; Затраты труда рабочих-строителей Разряд 3,8; Затраты труда машинистов (справочно, входит в стоимость ЭМ) | 288.21h |
| 38 | 1.37 | Устройство покрытия из плиток | 4d | 2024-11-07 | 2024-11-12 | 37 | 0d |  |  | Плитки керамические для полов гладкие неглазурованные одноцветные с красителем квадратные и прямоугольные [45.08 м2]; Опилки древесные [1.35 м3]; Раствор готовый кладочный тяжелый цементный [0.57 м3]; Вода [1.7 м3]; Автопогрузчики 5 т; Подъемники грузоподъемностью до 500 кг одномачтовые, высота подъема 45 м; Автомобили бортовые, грузоподъемность до 5 т; Затраты труда рабочих-строителей Разряд 3,2; Затраты труда машинистов (справочно, входит в стоимость ЭМ) | 55.42h |
| 39 | 1.38 | Монтаж оборудования | 12d | 2024-11-13 | 2024-11-28 | 32, 38 | 0d |  |  |  |  |
| 40 | 1.39 | Дороги, подъезды тротуары | 11d | 2024-11-29 | 2024-12-13 | 27, 28, 39 | 0d |  |  |  |  |
| 41 | 1.40 | Озеленение | 2d | 2024-12-16 | 2024-12-17 | 40 | 0d |  |  |  |  |
| 42 | 1.41 | Пусконаладочные работы | 9d | 2024-12-18 | 2024-12-30 | 41 | 0d |  |  |  |  |
| 43 | 1.42 | Ввод в экспулатацию | 1d | 2024-12-31 | 2024-12-31 | 42, 4 | 0d |  |  |  |  |
