Schedule from MS Project, 2009-11-16 to 2010-04-05.
Microsoft

## Calendars

- Стандартный: Mon-Fri 09:00-13:00, 14:00-18:00; Sat-Sun off.

## Resources

| Resource | Group | Unit |
| --- | --- | --- |
| Плитки керамические для полов гладкие неглазурованные многоцветные квадратные и прямоугольные |  | м2 |
| Конструктивные элементы вспомогательного назначения с преобладанием профильного проката собираемые из двух и более деталей, с отверстиями и без отверстий, соединяемые на сварке |  | т |
| Болты с гайками и шайбами строительные |  | т |
| Клей <Бустилат> |  | т |
| Автомобили бортовые, грузоподъемность до 5 т | Машины |  |
| Затраты труда рабочих-строителей Разряд 3,1 | Рабочие |  |
| Краны на автомобильном ходу при работе на других видах строительства 10 т | Машины |  |
| Бетон |  | м3 |
| Автопогрузчики 5 т | Машины |  |
| Раствор готовый отделочный тяжелый, известковый 1:2,0 |  | м3 |
| Котлы битумные передвижные 400 л | Машины |  |
| Бульдозеры при работе на других видах строительства 79 кВт (108 л.с.) | Машины |  |
| Затраты труда рабочих-строителей Разряд 3,6 | Рабочие |  |
| Автогрейдеры среднего типа 99 кВт(135 л.с.) | Машины |  |
| Опалубка типа<Дока> (конструкции металлические) |  | компл. |
| Опилки древесные |  | м3 |
| Трамбовки пневматические при работе от передвижных компрессорных станций | Машины |  |
| Опалубка переставная(амортизация) |  | компл. |
| Затраты труда рабочих-строителей Разряд 2,7 | Рабочие |  |
| Доски обрезные хвойных пород длиной 4-6,5 м, шириной 75-150 мм, толщиной 25 мм, III сорта |  | м3 |
| Симазин 50%-ный порошок смачивающийся |  | т |
| Гипсовые вяжущие, марка Г3 |  | т |
| Доски обрезные хвойных пород длиной 2-3,75 м, шириной 75-150 мм, толщиной 44 мм и более, II сорта |  | м3 |
| Проволока наплавочная диаметром 3 мм ПП-Нп-19СТ |  | т |
| Доски обрезные хвойных пород длиной 4-6,5 м, шириной 75-150 мм, толщиной 44 мм и более, III сорта |  | м3 |
| Подъемники грузоподъемностью до 500 кг одномачтовые, высота подъема 45 м | Машины |  |
| Войлок строительный |  | т |
| Компрессоры передвижные с двигателем внутреннего сгорания давлением до 686 кПа(7 ат), производительность 5 м3/мин | Машины |  |
| Раствор готовый кладочный цементный марки 200 |  | м3 |
| Кислород технический газообразный |  | м3 |
| Проволока светлая диаметром 1,1 мм |  | т |
| Краны на гусеничном ходу при работе на других видах строительства 25 т | Машины |  |
| Затраты труда рабочих-строителей Разряд 3,7 | Рабочие |  |
| Плиты гипсовые толщиной до 100 мм |  | м2 |
| Тягачи седельные, грузоподъемность 15 т | Машины |  |
| Блоки дверные |  | м2 |
| Вибратор поверхностный | Машины |  |
| Автомобили бортовые, грузоподъемность до 8 т | Машины |  |
| Гвозди толевые круглые 3,0х40 мм |  | т |
| Смазка солидол жировой марки <Ж> |  | т |
| Мастика битумная кровельная горячая |  | т |
| Горячекатаная арматурная сталь гладкая класса А-I, диаметром 14 мм |  | т |
| Раствор готовый отделочный тяжелый, известковый 1:3 |  | м3 |
| Вибратор глубинный | Машины |  |
| Ветошь |  | кг |
| Раствор готовый кладочный цементный марки 50 |  | м3 |
| Рогожа |  | м2 |
| Палуба опалубки типа<Дока> из бакелизированной фанеры |  | м2 |
| Полуприцепы-тяжеловозы, грузоподъемность 40 т | Машины |  |
| Затраты труда машинистов (справочно, входит в стоимость ЭМ) | Рабочие |  |
| Доски обрезные хвойных пород длиной 2-3,75 м, шириной 75-150 мм, толщиной 25 мм, IV сорта |  | м3 |
| Доски обрезные хвойных пород длиной 4-6,5 м, шириной 75-150 мм, толщиной 32-40 мм, IV сорта |  | м3 |
| Конструкции сборные железобетонные |  | шт. |
| Пила цепная электрическая | Машины |  |
| Вода |  | м3 |
| Смола каменноугольная для дорожного строительства |  | т |
| Лесоматериалы круглые хвойных пород для выработки пиломатериалов и заготовок (пластины) толщиной 20-24 см, III сорта |  | м3 |
| Комплексы вакуумные типа СО-177 | Машины |  |
| Затраты труда рабочих-строителей Разряд 3,8 | Рабочие |  |
| Экскаваторы одноковшовые дизельные на гусеничном ходу при работе на других видах строительства 0,5 м3 | Машины |  |
| Арматура |  | т |
| Гравий для строительных работ, фракция 5 -10 мм |  | м3 |
| Скобяные изделия |  | компл. |
| Затраты труда рабочих-строителей Разряд 3,2 | Рабочие |  |
| Толь с крупнозернистой посыпкой гидроизоляционный марки ТГ-350 |  | м2 |
| Краны башенные при работе на других видах строительства 10 т | Машины |  |
| Доски обрезные хвойных пород длиной 4-6,5 м, шириной 75-150 мм, толщиной 44 мм и более, II сорта |  | м3 |
| Песок для строительных работ природный |  | м3 |
| Масла антраценовые |  | т |
| Блоки оконные |  | м2 |
| Горячекатаная арматурная сталь класс а А-I |  | т |
| Гвозди проволочные круглые формовочные 1,6х100 мм |  | т |
| Затраты труда рабочих-строителей Разряд 4,2 | Рабочие |  |
| Шуруповерт | Машины |  |
| Натрий фтористый технический, марка А, сорт I |  | т |
| Пена монтажная |  | л |
| Поковки из квадратных заготовок, масса 2,825 кг |  | т |
| Ацетилен растворенный технический марки А |  | т |
| Трамбовки пневматические при работе от стационарного компрессора | Машины |  |
| Бетон тяжелый |  | м3 |
| Электроды диаметром 4 мм Э42 |  | т |
| Краны башенные при работе на других видах строительства 8 т | Машины |  |
| Шурупы строительные |  | т |
| Аппарат для газовой сварки и резки | Машины |  |
| Электроды диаметром 6 мм Э42 |  | т |
| Поковки из квадратных заготовок, масса 1,8 кг |  | т |
| Установки для сварки ручной дуговой(постоянного тока) | Машины |  |
| Материалы рулонные кровельные |  | м2 |
| Затраты труда рабочих-строителей Разряд 3,4 | Рабочие |  |
| Толь с крупнозернистой посыпкой марки ТВК-350 |  | м2 |
| Проволока горячекатаная в мотках, диаметром 6,3-6,5 мм |  | т |
| Доски подоконные деревянные |  | метры |
| Краны на гусеничном ходу при работе на других видах строительства 40 т | Машины |  |
| Бруски обрезные хвойных пород длиной 4-6,5 м, шириной 75-150 мм, толщиной 40-75 мм, III сорта |  | м3 |
| Рубероид подкладочный с пылевидной посыпкой РПП-300б |  | м2 |
| Раствор готовый кладочный тяжелый цементный |  | м3 |
| Гвозди строительные |  | т |
| Линолеум на теплозвукоизолирующей подоснове |  | м2 |
| Затраты труда рабочих-строителей Разряд 4 | Рабочие |  |

## Schedule

| ID | Task | Duration | Start | Finish | Predecessors | Total slack | Free slack | Resources | Work |
| --- | --- | --- | --- | --- | --- | --- | --- | --- | --- |
| 1 | Подготовительные работы | 10d | 2009-11-16 | 2009-11-27 |  | 0d |  |  |  |
| 2 | Планировка площадей | 1d | 2009-11-30 | 2009-11-30 | 1 | 0d |  | Бульдозеры при работе на других видах строительства 79 кВт (108 л.с.); Автогрейдеры среднего типа 99 кВт(135 л.с.); Затраты труда машинистов (справочно, входит в стоимость ЭМ) | 2.07h |
| 3 | Прочие и неучтенные общестроительные работы | 5d | 2009-11-30 | 2009-12-04 | 1 | 69d | 0d |  |  |
| 4 | Разработка грунта в отвал в котлованах | 1d | 2009-12-01 | 2009-12-01 | 2 | 0d |  | Экскаваторы одноковшовые дизельные на гусеничном ходу при работе на других видах строительства 0,5 м3; Затраты труда машинистов (справочно, входит в стоимость ЭМ) | 1.13h |
| 5 | Укладка фундаментов под колонны | 7d | 2009-12-02 | 2009-12-10 | 4 | 0d |  | Конструкции сборные железобетонные [17.32 шт.]; Песок для строительных работ природный [6.84 м3]; Краны на гусеничном ходу при работе на других видах строительства 25 т; Автопогрузчики 5 т; Компрессоры передвижные с двигателем внутреннего сгорания давлением до 686 кПа(7 ат), производительность 5 м3/мин; Трамбовки пневматические при работе от передвижных компрессорных станций; Тягачи седельные, грузоподъемность 15 т; Полуприцепы-тяжеловозы, грузоподъемность 40 т; Затраты труда рабочих-строителей Разряд 3,4; Затраты труда машинистов (справочно, входит в стоимость ЭМ) | 91.76h |
| 6 | Укладка ригелей | 1d | 2009-12-10 | 2009-12-11 | 5 | 0d |  | Проволока горячекатаная в мотках, диаметром 6,3-6,5 мм; Смазка солидол жировой марки <Ж>; Электроды диаметром 6 мм Э42; Доски обрезные хвойных пород длиной 4-6,5 м, шириной 75-150 мм, толщиной 32-40 мм, IV сорта; Бетон [0.02 м3]; Конструкции сборные железобетонные [1.39 шт.]; Краны на гусеничном ходу при работе на других видах строительства 40 т; Установки для сварки ручной дуговой(постоянного тока); Вибратор глубинный; Автомобили бортовые, грузоподъемность до 5 т; Тягачи седельные, грузоподъемность 15 т; Полуприцепы-тяжеловозы, грузоподъемность 40 т; Затраты труда рабочих-строителей Разряд 3,8; Затраты труда машинистов (справочно, входит в стоимость ЭМ) | 8.6h |
| 7 | Сантехнические работы 1-я стадия | 5d | 2009-12-11 | 2009-12-17 | 5 | 77d |  |  |  |
| 8 | Электромонтажные работы 1 стадия | 5d | 2009-12-11 | 2009-12-17 | 5 | 77d |  |  |  |
| 9 | Установка диафрагм жесткости | 8d | 2009-12-11 | 2009-12-23 | 6 | 0d |  | Ацетилен растворенный технический марки А; Кислород технический газообразный [1.22 м3]; Поковки из квадратных заготовок, масса 2,825 кг; Проволока наплавочная диаметром 3 мм ПП-Нп-19СТ; Электроды диаметром 6 мм Э42 [0.05 т]; Болты с гайками и шайбами строительные [0.02 т]; Гвозди строительные; Лесоматериалы круглые хвойных пород для выработки пиломатериалов и заготовок (пластины) толщиной 20-24 см, III сорта [0.07 м3]; Доски обрезные хвойных пород длиной 4-6,5 м, шириной 75-150 мм, толщиной 44 мм и более, II сорта [0.28 м3]; Конструктивные элементы вспомогательного назначения с преобладанием профильного проката собираемые из двух и более деталей, с отверстиями и без отверстий, соединяемые на сварке [0.81 т]; Бетон [4.97 м3]; Раствор готовый кладочный цементный марки 200 [0.44 м3]; Конструкции сборные железобетонные [23.54 шт.]; Краны башенные при работе на других видах строительства 8 т; Установки для сварки ручной дуговой(постоянного тока); Аппарат для газовой сварки и резки; Вибратор глубинный; Автомобили бортовые, грузоподъемность до 5 т; Затраты труда рабочих-строителей Разряд 4,2; Затраты труда машинистов (справочно, входит в стоимость ЭМ) | 413.5h |
| 10 | Укладка ригелей | 3d | 2009-12-11 | 2009-12-16 | 6 | 8d | 5d | Проволока горячекатаная в мотках, диаметром 6,3-6,5 мм; Смазка солидол жировой марки <Ж>; Электроды диаметром 6 мм Э42 [0.02 т]; Доски обрезные хвойных пород длиной 4-6,5 м, шириной 75-150 мм, толщиной 32-40 мм, IV сорта [0.04 м3]; Бетон [0.42 м3]; Конструкции сборные железобетонные [24.27 шт.]; Краны на гусеничном ходу при работе на других видах строительства 40 т; Установки для сварки ручной дуговой(постоянного тока); Вибратор глубинный; Автомобили бортовые, грузоподъемность до 5 т; Тягачи седельные, грузоподъемность 15 т; Полуприцепы-тяжеловозы, грузоподъемность 40 т; Затраты труда рабочих-строителей Разряд 3,8; Затраты труда машинистов (справочно, входит в стоимость ЭМ) | 150.64h |
| 11 | Установка колонн прямоугольного сечения в стаканы фундаментов зданий | 7d | 2009-12-24 | 2010-01-01 | 9 | 0d |  | Доски обрезные хвойных пород длиной 2-3,75 м, шириной 75-150 мм, толщиной 44 мм и более, II сорта [0.14 м3]; Бетон [4.64 м3]; Конструкции сборные железобетонные [43 шт.]; Краны на гусеничном ходу при работе на других видах строительства 25 т; Вибратор глубинный; Автомобили бортовые, грузоподъемность до 5 т; Тягачи седельные, грузоподъемность 15 т; Полуприцепы-тяжеловозы, грузоподъемность 40 т; Затраты труда рабочих-строителей Разряд 3,7; Затраты труда машинистов (справочно, входит в стоимость ЭМ) | 727.44h |
| 12 | Укладка плит перекрытий | 7d | 2010-01-04 | 2010-01-12 | 11 | 1d | 0d | Проволока горячекатаная в мотках, диаметром 6,3-6,5 мм [0.06 т]; Рубероид подкладочный с пылевидной посыпкой РПП-300б [148.33 м2]; Смазка солидол жировой марки <Ж> [0.01 т]; Электроды диаметром 6 мм Э42 [0.05 т]; Доски обрезные хвойных пород длиной 4-6,5 м, шириной 75-150 мм, толщиной 32-40 мм, IV сорта [1.28 м3]; Конструктивные элементы вспомогательного назначения с преобладанием профильного проката собираемые из двух и более деталей, с отверстиями и без отверстий, соединяемые на сварке [0.39 т]; Горячекатаная арматурная сталь гладкая класса А-I, диаметром 14 мм [0.03 т]; Бетон [31.78 м3]; Конструкции сборные железобетонные [151.35 шт.]; Краны на гусеничном ходу при работе на других видах строительства 40 т; Установки для сварки ручной дуговой(постоянного тока); Автомобили бортовые, грузоподъемность до 5 т; Затраты труда рабочих-строителей Разряд 3,6; Затраты труда машинистов (справочно, входит в стоимость ЭМ) | 467.56h |
| 13 | Укладка блоков и плит ленточных фундаментов | 3d | 2010-01-13 | 2010-01-15 | 12 | 4d | 0d | Конструкции сборные железобетонные [43 шт.]; Песок для строительных работ природный [16.98 м3]; Краны на гусеничном ходу при работе на других видах строительства 25 т; Автопогрузчики 5 т; Компрессоры передвижные с двигателем внутреннего сгорания давлением до 686 кПа(7 ат), производительность 5 м3/мин; Трамбовки пневматические при работе от стационарного компрессора; Тягачи седельные, грузоподъемность 15 т; Полуприцепы-тяжеловозы, грузоподъемность 40 т; Затраты труда рабочих-строителей Разряд 3,6; Затраты труда машинистов (справочно, входит в стоимость ЭМ) | 137.65h |
| 14 | Установка перегородок из гипсовых плит | 2d | 2010-01-15 | 2010-01-19 | 13 | 4d | 0d | Гвозди проволочные круглые формовочные 1,6х100 мм; Поковки из квадратных заготовок, масса 1,8 кг [0.01 т]; Толь с крупнозернистой посыпкой марки ТВК-350 [9.72 м2]; Плиты гипсовые толщиной до 100 мм [147.42 м2]; Бруски обрезные хвойных пород длиной 4-6,5 м, шириной 75-150 мм, толщиной 40-75 мм, III сорта [0.16 м3]; Горячекатаная арматурная сталь класс а А-I [0.02 т]; Гипсовые вяжущие, марка Г3 [0.92 т]; Песок для строительных работ природный [0.97 м3]; Вода [0.39 м3]; Краны башенные при работе на других видах строительства 8 т; Автомобили бортовые, грузоподъемность до 5 т; Затраты труда рабочих-строителей Разряд 3,6; Затраты труда машинистов (справочно, входит в стоимость ЭМ) | 165.53h |
| 15 | Укладка перемычек | 4d | 2010-01-20 | 2010-01-25 | 14 | 4d | 0d | Раствор готовый кладочный цементный марки 50 [0.2 м3]; Конструкции сборные железобетонные [62 шт.]; Краны башенные при работе на других видах строительства 10 т; Затраты труда рабочих-строителей Разряд 3,2; Затраты труда машинистов (справочно, входит в стоимость ЭМ) | 123.4h |
| 16 | Устройство кровель | 2d | 2010-01-25 | 2010-01-27 | 15 | 6d | 0d | Мастика битумная кровельная горячая [4.45 т]; Материалы рулонные кровельные [1624.54 м2]; Симазин 50%-ный порошок смачивающийся; Гравий для строительных работ, фракция 5 -10 мм [3.71 м3]; Краны башенные при работе на других видах строительства 8 т; Краны на автомобильном ходу при работе на других видах строительства 10 т; Автопогрузчики 5 т; Котлы битумные передвижные 400 л; Автомобили бортовые, грузоподъемность до 5 т; Затраты труда рабочих-строителей Разряд 3,8; Затраты труда машинистов (справочно, входит в стоимость ЭМ) | 148.36h |
| 17 | Устройство лестничных маршей в опалубке | 3d | 2010-01-27 | 2010-02-01 | 16 | 6d |  | Масла антраценовые; Проволока светлая диаметром 1,1 мм; Электроды диаметром 4 мм Э42; Рогожа [0.86 м2]; Гвозди строительные; Опалубка переставная(амортизация); Опалубка типа<Дока> (конструкции металлические); Палуба опалубки типа<Дока> из бакелизированной фанеры [0.58 м2]; Бруски обрезные хвойных пород длиной 4-6,5 м, шириной 75-150 мм, толщиной 40-75 мм, III сорта [0.02 м3]; Доски обрезные хвойных пород длиной 4-6,5 м, шириной 75-150 мм, толщиной 25 мм, III сорта; Доски обрезные хвойных пород длиной 4-6,5 м, шириной 75-150 мм, толщиной 44 мм и более, III сорта [0.02 м3]; Арматура [0.31 т]; Бетон тяжелый [2.03 м3]; Вода; Краны башенные при работе на других видах строительства 8 т; Краны на автомобильном ходу при работе на других видах строительства 10 т; Автопогрузчики 5 т; Установки для сварки ручной дуговой(постоянного тока); Вибратор поверхностный; Пила цепная электрическая; Автомобили бортовые, грузоподъемность до 8 т; Затраты труда рабочих-строителей Разряд 3,1; Затраты труда машинистов (справочно, входит в стоимость ЭМ) | 52.43h |
| 18 | Установка диафрагм жесткости | 4d | 2009-12-23 | 2009-12-29 | 10, 9 | 3d |  | Ацетилен растворенный технический марки А; Кислород технический газообразный [1.18 м3]; Поковки из квадратных заготовок, масса 2,825 кг; Проволока наплавочная диаметром 3 мм ПП-Нп-19СТ; Электроды диаметром 6 мм Э42 [0.05 т]; Болты с гайками и шайбами строительные [0.02 т]; Гвозди строительные; Лесоматериалы круглые хвойных пород для выработки пиломатериалов и заготовок (пластины) толщиной 20-24 см, III сорта [0.07 м3]; Доски обрезные хвойных пород длиной 4-6,5 м, шириной 75-150 мм, толщиной 44 мм и более, II сорта [0.27 м3]; Конструктивные элементы вспомогательного назначения с преобладанием профильного проката собираемые из двух и более деталей, с отверстиями и без отверстий, соединяемые на сварке [0.78 т]; Бетон [4.78 м3]; Раствор готовый кладочный цементный марки 200 [0.42 м3]; Конструкции сборные железобетонные [22.66 шт.]; Краны башенные при работе на других видах строительства 8 т; Установки для сварки ручной дуговой(постоянного тока); Аппарат для газовой сварки и резки; Вибратор глубинный; Автомобили бортовые, грузоподъемность до 5 т; Затраты труда рабочих-строителей Разряд 4,2; Затраты труда машинистов (справочно, входит в стоимость ЭМ) | 397.91h |
| 19 | Установка колонн прямоугольного сечения в стаканы фундаментов зданий | 8d | 2010-01-04 | 2010-01-13 | 18, 11 | 0d |  | Доски обрезные хвойных пород длиной 2-3,75 м, шириной 75-150 мм, толщиной 44 мм и более, II сорта [0.11 м3]; Бетон [3.67 м3]; Конструкции сборные железобетонные [34 шт.]; Краны на гусеничном ходу при работе на других видах строительства 25 т; Вибратор глубинный; Автомобили бортовые, грузоподъемность до 5 т; Тягачи седельные, грузоподъемность 15 т; Полуприцепы-тяжеловозы, грузоподъемность 40 т; Затраты труда рабочих-строителей Разряд 3,7; Затраты труда машинистов (справочно, входит в стоимость ЭМ) | 575.19h |
| 20 | Укладка плит перекрытий | 6d | 2010-01-14 | 2010-01-21 | 19, 12 | 0d |  | Проволока горячекатаная в мотках, диаметром 6,3-6,5 мм [0.04 т]; Рубероид подкладочный с пылевидной посыпкой РПП-300б [95.16 м2]; Смазка солидол жировой марки <Ж> [0.01 т]; Электроды диаметром 6 мм Э42 [0.03 т]; Доски обрезные хвойных пород длиной 4-6,5 м, шириной 75-150 мм, толщиной 32-40 мм, IV сорта [0.82 м3]; Конструктивные элементы вспомогательного назначения с преобладанием профильного проката собираемые из двух и более деталей, с отверстиями и без отверстий, соединяемые на сварке [0.25 т]; Горячекатаная арматурная сталь гладкая класса А-I, диаметром 14 мм [0.02 т]; Бетон [20.39 м3]; Конструкции сборные железобетонные [97.1 шт.]; Краны на гусеничном ходу при работе на других видах строительства 40 т; Установки для сварки ручной дуговой(постоянного тока); Автомобили бортовые, грузоподъемность до 5 т; Затраты труда рабочих-строителей Разряд 3,6; Затраты труда машинистов (справочно, входит в стоимость ЭМ) | 299.95h |
| 21 | Укладка блоков и плит ленточных фундаментов | 5d | 2010-01-22 | 2010-01-28 | 20, 13 | 0d |  | Конструкции сборные железобетонные [21 шт.]; Песок для строительных работ природный [8.29 м3]; Краны на гусеничном ходу при работе на других видах строительства 25 т; Автопогрузчики 5 т; Компрессоры передвижные с двигателем внутреннего сгорания давлением до 686 кПа(7 ат), производительность 5 м3/мин; Трамбовки пневматические при работе от стационарного компрессора; Тягачи седельные, грузоподъемность 15 т; Полуприцепы-тяжеловозы, грузоподъемность 40 т; Затраты труда рабочих-строителей Разряд 3,6; Затраты труда машинистов (справочно, входит в стоимость ЭМ) | 67.22h |
| 22 | Установка перегородок из гипсовых плит | 1d | 2010-01-28 | 2010-01-29 | 21, 14 | 0d |  | Гвозди проволочные круглые формовочные 1,6х100 мм; Поковки из квадратных заготовок, масса 1,8 кг; Толь с крупнозернистой посыпкой марки ТВК-350 [4.5 м2]; Плиты гипсовые толщиной до 100 мм [68.25 м2]; Бруски обрезные хвойных пород длиной 4-6,5 м, шириной 75-150 мм, толщиной 40-75 мм, III сорта [0.07 м3]; Горячекатаная арматурная сталь класс а А-I [0.01 т]; Гипсовые вяжущие, марка Г3 [0.43 т]; Песок для строительных работ природный [0.45 м3]; Вода [0.18 м3]; Краны башенные при работе на других видах строительства 8 т; Автомобили бортовые, грузоподъемность до 5 т; Затраты труда рабочих-строителей Разряд 3,6; Затраты труда машинистов (справочно, входит в стоимость ЭМ) | 76.64h |
| 23 | Укладка перемычек | 5d | 2010-02-01 | 2010-02-05 | 22, 15 | 0d |  | Раствор готовый кладочный цементный марки 50 [0.1 м3]; Конструкции сборные железобетонные [30 шт.]; Краны башенные при работе на других видах строительства 10 т; Затраты труда рабочих-строителей Разряд 3,2; Затраты труда машинистов (справочно, входит в стоимость ЭМ) | 59.71h |
| 24 | Устройство кровель | 2d | 2010-02-05 | 2010-02-09 | 23, 16 | 0d |  | Мастика битумная кровельная горячая [4.28 т]; Материалы рулонные кровельные [1563.26 м2]; Симазин 50%-ный порошок смачивающийся; Гравий для строительных работ, фракция 5 -10 мм [3.57 м3]; Краны башенные при работе на других видах строительства 8 т; Краны на автомобильном ходу при работе на других видах строительства 10 т; Автопогрузчики 5 т; Котлы битумные передвижные 400 л; Автомобили бортовые, грузоподъемность до 5 т; Затраты труда рабочих-строителей Разряд 3,8; Затраты труда машинистов (справочно, входит в стоимость ЭМ) | 142.77h |
| 25 | Устройство лестничных маршей в опалубке | 3d | 2010-02-10 | 2010-02-12 | 24, 17 | 0d |  |  |  |
| 26 | Устройство полов бетонных толщиной | 5d | 2010-02-15 | 2010-02-19 | 25 | 0d |  | Доски обрезные хвойных пород длиной 2-3,75 м, шириной 75-150 мм, толщиной 25 мм, IV сорта [0.21 м3]; Бетон тяжелый [36.02 м3]; Вода [1.77 м3]; Комплексы вакуумные типа СО-177; Затраты труда рабочих-строителей Разряд 4; Затраты труда машинистов (справочно, входит в стоимость ЭМ) | 184.84h |
| 27 | Сантехнические работы 2-я стадия | 4d | 2010-02-15 | 2010-02-18 | 25 | 22d |  |  |  |
| 28 | Электромонтажные работы 2 стадия | 4d | 2010-02-15 | 2010-02-18 | 25 | 22d |  |  |  |
| 29 | Устройство покрытий | 2d | 2010-02-22 | 2010-02-23 | 26 | 1d | 0d | Клей <Бустилат> [0.18 т]; Ветошь [1.77 кг]; Линолеум на теплозвукоизолирующей подоснове [360.22 м2]; Подъемники грузоподъемностью до 500 кг одномачтовые, высота подъема 45 м; Автомобили бортовые, грузоподъемность до 5 т; Затраты труда рабочих-строителей Разряд 2,7; Затраты труда машинистов (справочно, входит в стоимость ЭМ) | 153.98h |
| 30 | Устройство покрытий на цементном растворе из плиток | 3d | 2010-02-24 | 2010-02-26 | 29 | 1d | 0d | Опилки древесные [5.4 м3]; Плитки керамические для полов гладкие неглазурованные многоцветные квадратные и прямоугольные [180.11 м2]; Раствор готовый кладочный тяжелый цементный [2.3 м3]; Вода [6.8 м3]; Автопогрузчики 5 т; Подъемники грузоподъемностью до 500 кг одномачтовые, высота подъема 45 м; Автомобили бортовые, грузоподъемность до 5 т; Затраты труда рабочих-строителей Разряд 3,2; Затраты труда машинистов (справочно, входит в стоимость ЭМ) | 221.4h |
| 31 | Установка в жилых и общественных зданиях блоков оконных с переплетами | 4d | 2010-02-26 | 2010-03-04 | 30 | 1d | 0d | Гвозди толевые круглые 3,0х40 мм; Смола каменноугольная для дорожного строительства [0.05 т]; Толь с крупнозернистой посыпкой гидроизоляционный марки ТГ-350 [177 м2]; Гвозди строительные; Пена монтажная [77.85 л]; Скобяные изделия; Шурупы строительные [0.02 т]; Блоки оконные [150 м2]; Раствор готовый отделочный тяжелый, известковый 1:2,0 [0.21 м3]; Гипсовые вяжущие, марка Г3 [0.04 т]; Краны башенные при работе на других видах строительства 8 т; Краны на автомобильном ходу при работе на других видах строительства 10 т; Котлы битумные передвижные 400 л; Шуруповерт; Автомобили бортовые, грузоподъемность до 5 т; Затраты труда рабочих-строителей Разряд 3,4; Затраты труда машинистов (справочно, входит в стоимость ЭМ) | 325.43h |
| 32 | Установка деревянных дверных блоков | 2d | 2010-03-04 | 2010-03-08 | 31 | 1d | 0d | Гвозди строительные; Скобяные изделия; Блоки дверные [180 м2]; Краны на автомобильном ходу при работе на других видах строительства 10 т; Автомобили бортовые, грузоподъемность до 5 т; Затраты труда рабочих-строителей Разряд 3,2; Затраты труда машинистов (справочно, входит в стоимость ЭМ) | 140.29h |
| 33 | Установка деревянных подоконных досок в каменных стенах | 1d | 2010-03-08 | 2010-03-09 | 32 | 1d |  | Смола каменноугольная для дорожного строительства; Войлок строительный [0.04 т]; Толь с крупнозернистой посыпкой гидроизоляционный марки ТГ-350 [4.46 м2]; Гвозди строительные; Натрий фтористый технический, марка А, сорт I; Доски подоконные деревянные [59.2 метры]; Раствор готовый отделочный тяжелый, известковый 1:3 [0.27 м3]; Гипсовые вяжущие, марка Г3 [0.24 т]; Вода [0.48 м3]; Краны башенные при работе на других видах строительства 8 т; Котлы битумные передвижные 400 л; Автомобили бортовые, грузоподъемность до 5 т; Затраты труда рабочих-строителей Разряд 3,1; Затраты труда машинистов (справочно, входит в стоимость ЭМ) | 54.31h |
| 34 | Устройство полов бетонных толщиной | 5d | 2010-02-22 | 2010-02-26 | 26 | 0d |  | Доски обрезные хвойных пород длиной 2-3,75 м, шириной 75-150 мм, толщиной 25 мм, IV сорта [0.2 м3]; Бетон тяжелый [34.66 м3]; Вода [1.7 м3]; Комплексы вакуумные типа СО-177; Затраты труда рабочих-строителей Разряд 4; Затраты труда машинистов (справочно, входит в стоимость ЭМ) | 177.87h |
| 35 | Устройство покрытий | 2d | 2010-03-01 | 2010-03-02 | 34, 29 | 0d |  | Клей <Бустилат> [0.17 т]; Ветошь [1.7 кг]; Линолеум на теплозвукоизолирующей подоснове [346.64 м2]; Подъемники грузоподъемностью до 500 кг одномачтовые, высота подъема 45 м; Автомобили бортовые, грузоподъемность до 5 т; Затраты труда рабочих-строителей Разряд 2,7; Затраты труда машинистов (справочно, входит в стоимость ЭМ) | 148.17h |
| 36 | Устройство покрытий на цементном растворе из плиток | 3d | 2010-03-03 | 2010-03-05 | 35, 30 | 0d |  | Опилки древесные [10.4 м3]; Плитки керамические для полов гладкие неглазурованные многоцветные квадратные и прямоугольные [346.64 м2]; Раствор готовый кладочный тяжелый цементный [4.42 м3]; Вода [13.08 м3]; Автопогрузчики 5 т; Подъемники грузоподъемностью до 500 кг одномачтовые, высота подъема 45 м; Автомобили бортовые, грузоподъемность до 5 т; Затраты труда рабочих-строителей Разряд 3,2; Затраты труда машинистов (справочно, входит в стоимость ЭМ) | 426.09h |
| 37 | Установка в жилых и общественных зданиях блоков оконных с переплетами | 2d | 2010-03-05 | 2010-03-09 | 36, 31 | 0d |  | Гвозди толевые круглые 3,0х40 мм; Смола каменноугольная для дорожного строительства [0.02 т]; Толь с крупнозернистой посыпкой гидроизоляционный марки ТГ-350 [88.5 м2]; Гвозди строительные; Пена монтажная [38.92 л]; Скобяные изделия; Шурупы строительные [0.01 т]; Блоки оконные [75 м2]; Раствор готовый отделочный тяжелый, известковый 1:2,0 [0.1 м3]; Гипсовые вяжущие, марка Г3 [0.02 т]; Краны башенные при работе на других видах строительства 8 т; Краны на автомобильном ходу при работе на других видах строительства 10 т; Котлы битумные передвижные 400 л; Шуруповерт; Автомобили бортовые, грузоподъемность до 5 т; Затраты труда рабочих-строителей Разряд 3,4; Затраты труда машинистов (справочно, входит в стоимость ЭМ) | 162.71h |
| 38 | Установка деревянных дверных блоков | 1d | 2010-03-09 | 2010-03-10 | 37, 32 | 0d |  | Гвозди строительные; Скобяные изделия; Блоки дверные [90 м2]; Краны на автомобильном ходу при работе на других видах строительства 10 т; Автомобили бортовые, грузоподъемность до 5 т; Затраты труда рабочих-строителей Разряд 3,2; Затраты труда машинистов (справочно, входит в стоимость ЭМ) | 70.15h |
| 39 | Установка деревянных подоконных досок в каменных стенах | 1d | 2010-03-10 | 2010-03-11 | 38, 33 | 0d |  | Смола каменноугольная для дорожного строительства; Войлок строительный; Толь с крупнозернистой посыпкой гидроизоляционный марки ТГ-350 [0.56 м2]; Гвозди строительные; Натрий фтористый технический, марка А, сорт I; Доски подоконные деревянные [7.4 метры]; Раствор готовый отделочный тяжелый, известковый 1:3 [0.03 м3]; Гипсовые вяжущие, марка Г3 [0.03 т]; Вода [0.06 м3]; Краны башенные при работе на других видах строительства 8 т; Котлы битумные передвижные 400 л; Автомобили бортовые, грузоподъемность до 5 т; Затраты труда рабочих-строителей Разряд 3,1; Затраты труда машинистов (справочно, входит в стоимость ЭМ) | 6.79h |
| 40 | Монтаж оборудования | 7d | 2010-03-12 | 2010-03-22 | 39 | 0d |  |  |  |
| 41 | Дороги, подъезды тротуары | 5d | 2010-03-23 | 2010-03-29 | 40, 27, 28 | 0d |  |  |  |
| 42 | Озеленение | 1d | 2010-03-30 | 2010-03-30 | 41 | 0d |  |  |  |
| 43 | Пусконаладочные работы | 3d | 2010-03-31 | 2010-04-02 | 42, 3 | 0d |  |  |  |
| 44 | Ввод в эксплуатацию | 1d | 2010-04-05 | 2010-04-05 | 43 | 0d |  |  |  |
